# INST706_Project_Step1

Schedule from MS Project, 2018-05-29 to 2019-02-14, costs in $.
Toshiba

## Calendars

- Standard: Mon-Fri 08:00-12:00, 13:00-17:00; Sat-Sun off. Exceptions (off unless hours are given): 2018-07-04 (Independence Day), 2018-09-03 (Labor Day), 2018-11-22 to 2018-11-23 (Thanksgiving), 2018-12-24 to 2018-12-25 (Christmas), 2018-12-31 to 2019-01-01 (New Year's).

## Resources

| Resource | Rate |
| --- | --- |
| Chris Johnson (Project Manager) | 75 |
| Ryan Neff (Functional Lead) | 75 |
| Stacy Lyle (Functional Analyst) | 75 |
| Rick Burke (Infrastructure Lead) | 75 |
| Marc Sanders (Development Lead) | 75 |
| Developer 1 (TBD) | 165 |
| Sanjay Vohra (DBA) | 75 |
| Kara Siposki (Test Lead) | 75 |
| Todd Eliason (Tester) | 75 |
| Developer 2 (TBD) | 175 |
| Developer 3 (TBD) | 175 |
| Trainer 1 | 75 |
| End User 1 | 75 |
| End User 2 | 75 |
| ERP Expert 1 | 175 |
| ERP Expert 2 | 175 |
| Developer 4 | 175 |
| Developer 5 | 175 |

## Schedule

| ID | WBS | Task | Duration | Start | Finish | Predecessors | Total slack | Free slack | Constraint | Resources | Work | Cost |
| --- | --- | --- | --- | --- | --- | --- | --- | --- | --- | --- | --- | --- |
| 1 | 1 | **Overall Project** | 135d | 2018-05-29 08:00 | 2018-12-07 17:00 |  |  |  |  |  | 10728.8h | 1,172,976.79 |
| 2 | 1.1 | **Project Management** | 170.1d? | 2018-05-29 08:00 | 2019-02-01 08:48 |  | 9.6d |  |  |  | 1160h | 87,153.33 |
| 3 | 1.1.1 | Manage Project | 137d | 2018-05-29 08:00 | 2018-12-11 17:00 | 108FF | 48.7d | 0d |  | Chris Johnson (Project Manager) [90%] | 986.4h | 73,980 |
| 4 | 1.1.2 | Establish WBS Estimates | 4d? | 2018-05-29 08:00 | 2018-06-01 17:00 | 3SS | 181.2d | 0d | start no earlier than 2018-05-29 08:00 | Chris Johnson (Project Manager) | 32h | 2,400 |
| 5 | 1.1.3 | Kickoff Meeting | 0.5d | 2018-06-04 08:00 | 2018-06-04 12:00 | 4 | 175.2d |  |  | Chris Johnson (Project Manager); Developer 1 (TBD); Developer 2 (TBD); Developer 3 (TBD); Developer 4; Developer 5; End User 1; End User 2; ERP Expert 1; ERP Expert 2; Kara Siposki (Test Lead); Marc Sanders (Development Lead); Rick Burke (Infrastructure Lead); Ryan Neff (Functional Lead); Sanjay Vohra (DBA); Stacy Lyle (Functional Analyst); Todd Eliason (Tester); Trainer 1 | 4h | 453.33 |
| 6 | 1.1.4 | **Progress Review Team Meeting** | 126.1d | 2018-06-08 08:00 | 2018-12-07 08:48 |  | 45.6d |  |  |  | 21.6h | 1,620 |
| 7 | 1.1.4.1 | Progress Review Team Meeting 1 | 0.1d | 2018-06-08 08:00 | 2018-06-08 08:48 |  | 171.6d |  | start no earlier than 2018-06-08 08:00 | Chris Johnson (Project Manager) | 0.8h | 60 |
| 8 | 1.1.4.2 | Progress Review Team Meeting 2 | 0.1d | 2018-06-15 08:00 | 2018-06-15 08:48 |  | 166.6d |  | start no earlier than 2018-06-15 08:00 | Chris Johnson (Project Manager) | 0.8h | 60 |
| 9 | 1.1.4.3 | Progress Review Team Meeting 3 | 0.1d | 2018-06-22 08:00 | 2018-06-22 08:48 |  | 161.6d |  | start no earlier than 2018-06-22 08:00 | Chris Johnson (Project Manager) | 0.8h | 60 |
| 10 | 1.1.4.4 | Progress Review Team Meeting 4 | 0.1d | 2018-06-29 08:00 | 2018-06-29 08:48 |  | 156.6d |  | start no earlier than 2018-06-29 08:00 | Chris Johnson (Project Manager) | 0.8h | 60 |
| 11 | 1.1.4.5 | Progress Review Team Meeting 5 | 0.1d | 2018-07-06 08:00 | 2018-07-06 08:48 |  | 152.6d |  | start no earlier than 2018-07-06 08:00 | Chris Johnson (Project Manager) | 0.8h | 60 |
| 12 | 1.1.4.6 | Progress Review Team Meeting 6 | 0.1d | 2018-07-13 08:00 | 2018-07-13 08:48 |  | 147.6d |  | start no earlier than 2018-07-13 08:00 | Chris Johnson (Project Manager) | 0.8h | 60 |
| 13 | 1.1.4.7 | Progress Review Team Meeting 7 | 0.1d | 2018-07-20 08:00 | 2018-07-20 08:48 |  | 142.6d |  | start no earlier than 2018-07-20 08:00 | Chris Johnson (Project Manager) | 0.8h | 60 |
| 14 | 1.1.4.8 | Progress Review Team Meeting 8 | 0.1d | 2018-07-27 08:00 | 2018-07-27 08:48 |  | 137.6d |  | start no earlier than 2018-07-27 08:00 | Chris Johnson (Project Manager) | 0.8h | 60 |
| 15 | 1.1.4.9 | Progress Review Team Meeting 9 | 0.1d | 2018-08-03 08:00 | 2018-08-03 08:48 |  | 132.6d |  | start no earlier than 2018-08-03 08:00 | Chris Johnson (Project Manager) | 0.8h | 60 |
| 16 | 1.1.4.10 | Progress Review Team Meeting 10 | 0.1d | 2018-08-10 08:00 | 2018-08-10 08:48 |  | 127.6d |  | start no earlier than 2018-08-10 08:00 | Chris Johnson (Project Manager) | 0.8h | 60 |
| 17 | 1.1.4.11 | Progress Review Team Meeting 11 | 0.1d | 2018-08-17 08:00 | 2018-08-17 08:48 |  | 122.6d |  | start no earlier than 2018-08-17 08:00 | Chris Johnson (Project Manager) | 0.8h | 60 |
| 18 | 1.1.4.12 | Progress Review Team Meeting 12 | 0.1d | 2018-08-24 08:00 | 2018-08-24 08:48 |  | 117.6d |  | start no earlier than 2018-08-24 08:00 | Chris Johnson (Project Manager) | 0.8h | 60 |
| 19 | 1.1.4.13 | Progress Review Team Meeting 13 | 0.1d | 2018-08-31 08:00 | 2018-08-31 08:48 |  | 112.6d |  | start no earlier than 2018-08-31 08:00 | Chris Johnson (Project Manager) | 0.8h | 60 |
| 20 | 1.1.4.14 | Progress Review Team Meeting 14 | 0.1d | 2018-09-07 08:00 | 2018-09-07 08:48 |  | 108.6d |  | start no earlier than 2018-09-07 08:00 | Chris Johnson (Project Manager) | 0.8h | 60 |
| 21 | 1.1.4.15 | Progress Review Team Meeting 15 | 0.1d | 2018-09-14 08:00 | 2018-09-14 08:48 |  | 103.6d |  | start no earlier than 2018-09-14 08:00 | Chris Johnson (Project Manager) | 0.8h | 60 |
| 22 | 1.1.4.16 | Progress Review Team Meeting 16 | 0.1d | 2018-09-21 08:00 | 2018-09-21 08:48 |  | 98.6d |  | start no earlier than 2018-09-21 08:00 | Chris Johnson (Project Manager) | 0.8h | 60 |
| 23 | 1.1.4.17 | Progress Review Team Meeting 17 | 0.1d | 2018-09-28 08:00 | 2018-09-28 08:48 |  | 93.6d |  | start no earlier than 2018-09-28 08:00 | Chris Johnson (Project Manager) | 0.8h | 60 |
| 24 | 1.1.4.18 | Progress Review Team Meeting 18 | 0.1d | 2018-10-05 08:00 | 2018-10-05 08:48 |  | 88.6d |  | start no earlier than 2018-10-05 08:00 | Chris Johnson (Project Manager) | 0.8h | 60 |
| 25 | 1.1.4.19 | Progress Review Team Meeting 19 | 0.1d | 2018-10-12 08:00 | 2018-10-12 08:48 |  | 83.6d |  | start no earlier than 2018-10-12 08:00 | Chris Johnson (Project Manager) | 0.8h | 60 |
| 26 | 1.1.4.20 | Progress Review Team Meeting 20 | 0.1d | 2018-10-19 08:00 | 2018-10-19 08:48 |  | 78.6d |  | start no earlier than 2018-10-19 08:00 | Chris Johnson (Project Manager) | 0.8h | 60 |
| 27 | 1.1.4.21 | Progress Review Team Meeting 21 | 0.1d | 2018-10-26 08:00 | 2018-10-26 08:48 |  | 73.6d |  | start no earlier than 2018-10-26 08:00 | Chris Johnson (Project Manager) | 0.8h | 60 |
| 28 | 1.1.4.22 | Progress Review Team Meeting 22 | 0.1d | 2018-11-02 08:00 | 2018-11-02 08:48 |  | 68.6d |  | start no earlier than 2018-11-02 08:00 | Chris Johnson (Project Manager) | 0.8h | 60 |
| 29 | 1.1.4.23 | Progress Review Team Meeting 23 | 0.1d | 2018-11-09 08:00 | 2018-11-09 08:48 |  | 63.6d |  | start no earlier than 2018-11-09 08:00 | Chris Johnson (Project Manager) | 0.8h | 60 |
| 30 | 1.1.4.24 | Progress Review Team Meeting 24 | 0.1d | 2018-11-16 08:00 | 2018-11-16 08:48 |  | 58.6d |  | start no earlier than 2018-11-16 08:00 | Chris Johnson (Project Manager) | 0.8h | 60 |
| 31 | 1.1.4.25 | Progress Review Team Meeting 25 | 0.1d | 2018-11-26 08:00 | 2018-11-26 08:48 |  | 54.6d |  | start no earlier than 2018-11-23 08:00 | Chris Johnson (Project Manager) | 0.8h | 60 |
| 32 | 1.1.4.26 | Progress Review Team Meeting 26 | 0.1d | 2018-11-30 08:00 | 2018-11-30 08:48 |  | 50.6d |  | start no earlier than 2018-11-30 08:00 | Chris Johnson (Project Manager) | 0.8h | 60 |
| 33 | 1.1.4.27 | Progress Review Team Meeting 27 | 0.1d | 2018-12-07 08:00 | 2018-12-07 08:48 |  | 45.6d |  | start no earlier than 2018-12-07 08:00 | Chris Johnson (Project Manager) | 0.8h | 60 |

| ID | WBS | Task | Duration | Start | Finish | Predecessors | Total slack | Free slack | Constraint | Resources | Work | Cost |
| --- | --- | --- | --- | --- | --- | --- | --- | --- | --- | --- | --- | --- |
| 34 | 1.1.5 | **Update Sponsors** | 146.1d | 2018-07-02 08:00 | 2019-02-01 08:48 |  | 9.6d |  |  |  | 6.4h | 480 |
| 35 | 1.1.5.1 | Update Sponsors 1 | 0.1d | 2018-07-02 08:00 | 2018-07-02 08:48 |  | 155.6d |  | start no earlier than 2018-07-01 08:00 | Chris Johnson (Project Manager) | 0.8h | 60 |
| 36 | 1.1.5.2 | Update Sponsors 2 | 0.1d | 2018-08-01 08:00 | 2018-08-01 08:48 |  | 134.6d |  | start no earlier than 2018-08-01 08:00 | Chris Johnson (Project Manager) | 0.8h | 60 |
| 37 | 1.1.5.3 | Update Sponsors 3 | 0.1d | 2018-09-04 08:00 | 2018-09-04 08:48 |  | 111.6d |  | start no earlier than 2018-09-01 08:00 | Chris Johnson (Project Manager) | 0.8h | 60 |
| 38 | 1.1.5.4 | Update Sponsors 4 | 0.1d | 2018-10-01 08:00 | 2018-10-01 08:48 |  | 92.6d |  | start no earlier than 2018-10-01 08:00 | Chris Johnson (Project Manager) | 0.8h | 60 |
| 39 | 1.1.5.5 | Update Sponsors 5 | 0.1d | 2018-11-01 08:00 | 2018-11-01 08:48 |  | 69.6d |  | start no earlier than 2018-11-01 08:00 | Chris Johnson (Project Manager) | 0.8h | 60 |
| 40 | 1.1.5.6 | Update Sponsors 6 | 0.1d | 2018-12-03 08:00 | 2018-12-03 08:48 |  | 49.6d |  | start no earlier than 2018-12-01 08:00 | Chris Johnson (Project Manager) | 0.8h | 60 |
| 41 | 1.1.5.7 | Update Sponsors 7 | 0.1d | 2019-01-02 08:00 | 2019-01-02 08:48 |  | 31.6d |  | start no earlier than 2019-01-01 08:00 | Chris Johnson (Project Manager) | 0.8h | 60 |
| 42 | 1.1.5.8 | Update Sponsors 8 | 0.1d | 2019-02-01 08:00 | 2019-02-01 08:48 |  | 9.6d |  | start no earlier than 2019-02-01 08:00 | Chris Johnson (Project Manager) | 0.8h | 60 |
| 43 | 1.1.6 | Document project progress | 137d | 2018-05-29 08:00 | 2018-12-11 17:00 | 108FF | 42.7d |  |  | Chris Johnson (Project Manager) [10%] | 109.6h | 8,220 |
| 44 | 1.2 | **System Requirements** | 13.33d | 2018-05-29 08:00 | 2018-06-15 10:38 |  |  |  |  |  | 295.92h | 22,194 |
| 45 | 1.2.1 | Gather Business Requirements | 4d | 2018-05-29 08:00 | 2018-06-01 17:00 |  | 1d | 0d |  | Ryan Neff (Functional Lead); Stacy Lyle (Functional Analyst) | 64h | 4,800 |
| 46 | 1.2.2 | Design Business Process Flows | 2d | 2018-06-04 08:00 | 2018-06-05 17:00 | 45 | 1d | 0d |  | Ryan Neff (Functional Lead); Stacy Lyle (Functional Analyst) | 32h | 2,400 |
| 47 | 1.2.3 | Document Business Process Flows | 0.5d | 2018-06-06 08:00 | 2018-06-06 12:00 | 46 | 173.2d |  |  | Ryan Neff (Functional Lead); Stacy Lyle (Functional Analyst) | 8h | 600 |
| 48 | 1.2.4 | Finalize Technical Requirements | 6d | 2018-05-29 08:00 | 2018-06-05 17:00 |  | 17.37d | 5d |  | Rick Burke (Infrastructure Lead) | 48h | 3,600 |
| 49 | 1.2.5 | Create Operational Requirements | 5d | 2018-06-06 08:00 | 2018-06-12 17:00 | 45, 46 | 1d | 0d |  | Ryan Neff (Functional Lead); Stacy Lyle (Functional Analyst); Rick Burke (Infrastructure Lead) | 120h | 9,000 |
| 50 | 1.2.6 | Identify Technical Infrastructure Needs | 2d | 2018-06-13 08:00 | 2018-06-14 17:00 | 48, 49 | 12.37d | 0d |  | Rick Burke (Infrastructure Lead) | 16h | 1,200 |
| 51 | 1.2.7 | Document Requirements | 0.33d | 2018-06-15 08:00 | 2018-06-15 10:38 | 45, 48, 49, 50 | 166.37d |  |  | Rick Burke (Infrastructure Lead); Stacy Lyle (Functional Analyst); Ryan Neff (Functional Lead) | 7.92h | 594 |
| 52 | 1.3 | **Software Requirements** | 19.5d | 2018-06-15 08:00 | 2018-07-13 12:00 |  |  |  |  |  | 336h | 25,200 |
| 53 | 1.3.1 | **Create Functional Requirements** | 19.5d | 2018-06-15 08:00 | 2018-07-13 12:00 | 45, 46, 49 |  |  |  |  | 216h | 16,200 |
| 54 | 1.3.1.1 | Capture Customer Profile | 4d | 2018-06-15 08:00 | 2018-06-20 17:00 |  | 4d | 2d |  | Ryan Neff (Functional Lead) | 32h | 2,400 |
| 55 | 1.3.1.2 | View and Search Product Catalog | 6d | 2018-06-15 08:00 | 2018-06-22 17:00 |  | -1d | 0d |  | Ryan Neff (Functional Lead) | 48h | 3,600 |
| 56 | 1.3.1.3 | Updating and Calculating Shopping Cart | 3d | 2018-06-25 08:00 | 2018-06-27 17:00 | 55 | -1d | 0d |  | Ryan Neff (Functional Lead) | 24h | 1,800 |
| 57 | 1.3.1.4 | Taking Payments | 6d | 2018-06-15 08:00 | 2018-06-22 17:00 |  | 2d |  |  | Stacy Lyle (Functional Analyst) | 48h | 3,600 |
| 58 | 1.3.1.5 | Submit Order | 8d | 2018-06-28 08:00 | 2018-07-10 17:00 | 54, 55, 56, 57 | -1d | 0d |  | Ryan Neff (Functional Lead) [50%] | 32h | 2,400 |
| 59 | 1.3.1.6 | Check Order History & Order Status | 3d | 2018-07-11 08:00 | 2018-07-13 17:00 | 58 | -1d | 0d |  | Ryan Neff (Functional Lead) | 24h | 1,800 |
| 60 | 1.3.1.7 | Document Functional requirements | 0.5d | 2018-07-16 08:00 | 2018-07-16 12:00 | 54, 55, 56, 57, 58, 59 | -1d | 0d |  | Ryan Neff (Functional Lead); Stacy Lyle (Functional Analyst) | 8h | 600 |
| 61 | 1.3.2 | Create Data Requirements | 3d | 2018-06-25 08:00 | 2018-06-27 17:00 | 54, 55 | 9.5d | 7d |  | Stacy Lyle (Functional Analyst) | 24h | 1,800 |
| 62 | 1.3.3 | Create ERP Interface Requirements | 7d | 2018-06-28 08:00 | 2018-07-09 17:00 | 58SS | 2.5d | 0d |  | Stacy Lyle (Functional Analyst) | 56h | 4,200 |
| 63 | 1.3.4 | Create User Interface Requirements | 4d | 2018-06-25 08:00 | 2018-06-28 17:00 | 53SS | 8.5d | 6d |  | Stacy Lyle (Functional Analyst) | 32h | 2,400 |
| 64 | 1.3.5 | Document Data, ERP Interface and User Interface Requiremnts | 1d | 2018-07-10 08:00 | 2018-07-10 17:00 | 61, 62, 63 | 2.5d |  |  | Stacy Lyle (Functional Analyst) | 8h | 600 |

| ID | WBS | Task | Duration | Start | Finish | Predecessors | Total slack | Free slack | Resources | Work | Cost |
| --- | --- | --- | --- | --- | --- | --- | --- | --- | --- | --- | --- |
| 65 | 1.4 | **Detailed Design** | 27.2d | 2018-07-13 13:00 | 2018-08-21 14:36 | 52 | 0d |  |  | 784h | 74,784 |
| 66 | 1.4.1 | Design Capture Customer Profile Pages & Components | 9d | 2018-07-13 13:00 | 2018-07-26 12:00 |  | 3d | 0d | Marc Sanders (Development Lead); Ryan Neff (Functional Lead) [50%] | 108h | 8,100 |
| 67 | 1.4.2 | Design View and Search Product Catalog Pages & Components | 9d | 2018-07-13 13:00 | 2018-07-26 12:00 |  | 0d |  | Developer 1 (TBD); Ryan Neff (Functional Lead) [50%] | 108h | 14,580 |
| 68 | 1.4.3 | Design Updating and Calculating Shopping Cart | 3d | 2018-07-26 13:00 | 2018-07-31 12:00 | 67 | 0d |  | Developer 1 (TBD); Ryan Neff (Functional Lead) | 48h | 5,760 |
| 69 | 1.4.4 | Design Taking Payments Pages & Components | 6d | 2018-07-13 13:00 | 2018-07-31 12:00 |  | 0d |  | Marc Sanders (Development Lead); Stacy Lyle (Functional Analyst) | 48h | 3,600 |
| 70 | 1.4.5 | Design Submit Order Pages & Components | 8d | 2018-07-31 13:00 | 2018-08-10 12:00 | 66, 67, 68, 69 | 5d | 0d | Marc Sanders (Development Lead); Ryan Neff (Functional Lead) | 128h | 9,600 |
| 71 | 1.4.6 | Design check Order History & Order Status Pages & Components | 2d | 2018-08-10 13:00 | 2018-08-14 12:00 | 70 | 5d | 0d | Marc Sanders (Development Lead); Ryan Neff (Functional Lead) | 32h | 2,400 |
| 72 | 1.4.7 | Design Logical & Physical Data Model | 12d | 2018-07-13 13:00 | 2018-07-31 12:00 |  | 3.87d | 0d | Sanjay Vohra (DBA); Stacy Lyle (Functional Analyst) | 144h | 10,800 |
| 73 | 1.4.8 | Design ERP Interface | 15d | 2018-07-31 13:00 | 2018-08-21 12:00 | 66, 67, 68, 69 | 0d |  | Developer 1 (TBD) [66.7%]; Stacy Lyle (Functional Analyst) [66.7%] | 160h | 19,200 |
| 74 | 1.4.9 | Document the design of all modules | 0.2d | 2018-08-21 13:00 | 2018-08-21 14:36 | 66, 67, 68, 69, 70, 71, 72, 73 | 0d |  | Ryan Neff (Functional Lead); Stacy Lyle (Functional Analyst); Developer 1 (TBD); Marc Sanders (Development Lead); Sanjay Vohra (DBA) | 8h | 744 |
| 75 | 1.5 | **Test Planning** | 51.87d | 2018-07-13 13:00 | 2018-09-26 10:56 |  | 0d |  |  | 448h | 33,600 |
| 76 | 1.5.1 | Gather Testing Requirements | 7d | 2018-07-13 13:00 | 2018-07-24 12:00 | 53 | 20.2d |  | Kara Siposki (Test Lead); Todd Eliason (Tester) | 112h | 8,400 |
| 77 | 1.5.2 | Create System Test Plan & Test Cases | 10d | 2018-08-21 14:36 | 2018-09-05 14:36 | 76, 65 | 0d |  | Kara Siposki (Test Lead); Todd Eliason (Tester) | 160h | 12,000 |
| 78 | 1.5.3 | Write System Test Scripts | 14.67d | 2018-09-05 14:36 | 2018-09-26 10:56 | 77 | 0d |  | Kara Siposki (Test Lead); Todd Eliason (Tester) | 176h | 13,200 |
| 79 | 1.6 | **Technical Infrastructure** | 109d | 2018-06-15 08:00 | 2018-11-16 17:00 |  | 12.37d |  |  | 876.8h | 65,760 |
| 80 | 1.6.1 | Create Development Environment | 20d | 2018-06-15 08:00 | 2018-07-13 17:00 | 50 | 12.37d | 0d | Rick Burke (Infrastructure Lead) | 160h | 12,000 |
| 81 | 1.6.2 | Create Testing Environment | 38d | 2018-07-16 08:00 | 2018-09-06 17:00 | 80 | 62.2d | 0d | Rick Burke (Infrastructure Lead) [90%] | 273.6h | 20,520 |
| 82 | 1.6.3 | Support Development Environment | 38d | 2018-07-16 08:00 | 2018-09-06 17:00 | 80 | 108.2d | 50.5d | Rick Burke (Infrastructure Lead) [10%] | 30.4h | 2,280 |
| 83 | 1.6.4 | Support Testing Environment & Deployment | 46d | 2018-09-07 08:00 | 2018-11-09 17:00 | 81 | 62.2d | 4.5d | Rick Burke (Infrastructure Lead) | 368h | 27,600 |
| 84 | 1.6.5 | Support Database | 46d | 2018-09-13 13:00 | 2018-11-16 12:00 | 94 | 57.7d | 0d | Sanjay Vohra (DBA) [10%] | 36.8h | 2,760 |
| 85 | 1.6.6 | Document Technical infrastructure details | 0.5d | 2018-11-16 13:00 | 2018-11-16 17:00 | 80, 81, 82, 83, 84 | 57.7d |  | Rick Burke (Infrastructure Lead); Sanjay Vohra (DBA) | 8h | 600 |
| 86 | 1.7 | **Development & Unit Test** | 45.16d | 2018-07-26 13:00 | 2018-09-28 14:15 | 80 | 3.87d |  |  | 1292.24h | 167,110.8 |
| 87 | 1.7.1 | Train developers | 3d | 2018-07-26 13:00 | 2018-07-31 12:00 | 66 | 3.87d | 0d | Trainer 1; Developer 1 (TBD); Developer 2 (TBD); Developer 3 (TBD) | 96h | 14,160 |
| 88 | 1.7.2 | Build Capture Customer Profile Pages & Components | 13d | 2018-07-31 13:00 | 2018-08-27 12:00 | 66, 87 | 3.87d | 0d | Developer 2 (TBD) | 104h | 18,200 |
| 89 | 1.7.3 | Build View and Search Product Catalog Pages & Components | 12d | 2018-07-31 13:00 | 2018-08-16 12:00 | 67, 87 | 3.87d | 0d | Developer 3 (TBD) | 96h | 16,800 |
| 90 | 1.7.4 | Build Updating and Calculating Shopping Cart | 7d | 2018-08-16 13:00 | 2018-08-27 12:00 | 68, 89, 87 | 3.87d | 0d | Developer 3 (TBD) | 56h | 9,800 |
| 91 | 1.7.5 | Build Taking Payments Pages & Components | 6d | 2018-07-31 13:00 | 2018-08-08 12:00 | 69, 87 | 16.87d | 13d | Developer 2 (TBD) | 48h | 8,400 |
| 92 | 1.7.6 | Build Submit Order Pages & Components | 12d | 2018-08-27 13:00 | 2018-09-13 12:00 | 70, 88, 89, 90, 91, 87 | 3.87d | 2d | Developer 2 (TBD); Developer 3 (TBD) | 192h | 33,600 |
| 93 | 1.7.7 | Build Check Order History & Order Status Pages & Components | 6d | 2018-08-14 13:00 | 2018-08-22 12:00 | 71, 87 | 18.87d | 17d | Marc Sanders (Development Lead) | 48h | 3,600 |
| 94 | 1.7.8 | Build Logical & Physical Data Model | 31d | 2018-07-31 13:00 | 2018-09-13 12:00 | 72, 87 | 3.87d | 0d | Sanjay Vohra (DBA) [50%] | 124h | 9,300 |
| 95 | 1.7.9 | Build ERP Interface | 18d | 2018-08-21 13:00 | 2018-09-17 12:00 | 73, 87 | 1.87d | 0d | Developer 1 (TBD) | 144h | 23,760 |
| 96 | 1.7.10 | Support Development & Assembly Test | 26.67d | 2018-08-21 14:36 | 2018-09-28 10:56 | 65, 87 | 93.04d | 0d | Ryan Neff (Functional Lead); Stacy Lyle (Functional Analyst) | 368h | 27,600 |
| 97 | 1.7.11 | Document development work and best practices | 0.29d | 2018-09-28 10:56 | 2018-09-28 14:15 | 88, 89, 90, 91, 92, 93, 94, 95, 96 | 93.04d |  | Developer 1 (TBD); Developer 2 (TBD); Developer 3 (TBD); Stacy Lyle (Functional Analyst); Sanjay Vohra (DBA); Marc Sanders (Development Lead); Ryan Neff (Functional Lead) | 16.24h | 1,890.8 |

| ID | WBS | Task | Duration | Start | Finish | Predecessors | Total slack | Free slack | Resources | Work | Cost |
| --- | --- | --- | --- | --- | --- | --- | --- | --- | --- | --- | --- |
| 98 | 1.8 | **Testing** | 45.2d | 2018-08-27 13:00 | 2018-10-30 14:34 |  | 0d |  |  | 2191.84h | 258,033.6 |
| 99 | 1.8.1 | **Perform Assembly Testing** | 19d | 2018-08-27 13:00 | 2018-09-24 12:00 | 76 | 1.87d |  |  | 256h | 30,800 |
| 100 | 1.8.1.1 | Perform Phase 1 Testing | 12d | 2018-08-27 13:00 | 2018-09-13 12:00 | 88, 89, 90 | 3.87d | 2d | Marc Sanders (Development Lead) | 96h | 7,200 |
| 101 | 1.8.1.2 | Perform Phase 2 Testing | 5d | 2018-09-17 13:00 | 2018-09-24 12:00 | 91, 92, 93, 100, 94, 95 | 1.87d |  | Marc Sanders (Development Lead); Developer 1 (TBD); Developer 2 (TBD); Developer 3 (TBD) | 160h | 23,600 |
| 102 | 1.8.2 | Perform System Testing | 16d | 2018-09-26 10:56 | 2018-10-18 10:56 | 99, 77, 78 | 0d |  | Developer 1 (TBD); Developer 2 (TBD); Developer 3 (TBD); Kara Siposki (Test Lead); Marc Sanders (Development Lead); Ryan Neff (Functional Lead); Stacy Lyle (Functional Analyst); Todd Eliason (Tester); ERP Expert 1; ERP Expert 2 | 1280h | 158,720 |
| 103 | 1.8.3 | Perform Validation Testing | 8d | 2018-10-18 10:56 | 2018-10-30 10:56 | 102 | 0d |  | Kara Siposki (Test Lead); Todd Eliason (Tester); Marc Sanders (Development Lead); Developer 1 (TBD); Developer 2 (TBD); Developer 3 (TBD); Ryan Neff (Functional Lead); Stacy Lyle (Functional Analyst); End User 1; End User 2 | 640h | 66,560 |
| 104 | 1.8.4 | Document tests and test results | 0.33d | 2018-10-30 10:56 | 2018-10-30 14:34 | 99, 102, 103 | 0d |  | Developer 1 (TBD); Developer 2 (TBD); Developer 3 (TBD); Kara Siposki (Test Lead); Stacy Lyle (Functional Analyst); Todd Eliason (Tester) | 15.84h | 1,953.6 |
| 105 | 1.9 | **Deployment** | 22.58d | 2018-10-30 14:34 | 2018-12-04 10:12 | 98 | 0d |  |  | 1424h | 151,141.05 |
| 106 | 1.9.1 | Implement System | 10d | 2018-10-30 14:34 | 2018-11-13 14:34 |  | 0d |  | Kara Siposki (Test Lead); Todd Eliason (Tester); Marc Sanders (Development Lead); Developer 1 (TBD); Developer 2 (TBD); Developer 3 (TBD); Ryan Neff (Functional Lead); Stacy Lyle (Functional Analyst) | 640h | 71,200 |
| 107 | 1.9.2 | Deploy To Production | 1d | 2018-11-13 14:34 | 2018-11-14 14:34 | 106 | 0d |  | Kara Siposki (Test Lead); Todd Eliason (Tester); Marc Sanders (Development Lead); Developer 1 (TBD); Developer 2 (TBD); Developer 3 (TBD); Ryan Neff (Functional Lead); Stacy Lyle (Functional Analyst) | 64h | 7,120 |
| 108 | 1.9.3 | Project Wrap up | 11.58d | 2018-11-14 14:34 | 2018-12-04 10:12 | 107 | 48.42d | 5.72d | Developer 1 (TBD); Developer 2 (TBD); Developer 3 (TBD); Kara Siposki (Test Lead); Marc Sanders (Development Lead); Ryan Neff (Functional Lead); Stacy Lyle (Functional Analyst); Todd Eliason (Tester); Rick Burke (Infrastructure Lead) | 720h | 72,821.05 |
| 109 | 1.10 | **Post-Installation Maintenance and Support** | 60d | 2018-11-14 14:34 | 2019-02-14 14:34 | 107 | 0d |  |  | 1920h | 288,000 |
| 110 | 1.10.1 | Maintenance Post-Installation | 60d | 2018-11-14 14:34 | 2019-02-14 14:34 |  | 0d |  | Sanjay Vohra (DBA); ERP Expert 1 | 960h | 120,000 |
| 111 | 1.10.2 | Support Post-Installation | 60d | 2018-11-14 14:34 | 2019-02-14 14:34 | 110FF | 0d |  | ERP Expert 2; Developer 5 | 960h | 168,000 |
