# INST706_Project_Step1

Schedule from MS Project, 2018-05-29 to 2019-07-24, costs in $.
Toshiba

## Calendars

- Standard: Mon-Fri 08:00-12:00, 13:00-17:00; Sat-Sun off. Exceptions (off unless hours are given): 2018-07-04 (Independence Day), 2018-09-03 (Labor Day), 2018-11-22 to 2018-11-23 (Thanksgiving), 2018-12-24 to 2018-12-25 (Christmas), 2018-12-31 to 2019-01-01 (New Year's).

## Resources

| Resource | Rate |
| --- | --- |
| Chris Johnson (Project Manager) | 75 |
| Ryan Neff (Functional Lead) | 75 |
| Stacy Lyle (Functional Analyst) | 75 |
| Rick Burke (Infrastructure Lead) | 75 |
| Marc Sanders (Development Lead) | 75 |
| Developer 1 (TBD) | 165 |
| Sanjay Vohra (DBA) | 75 |
| Kara Siposki (Test Lead) | 75 |
| Todd Eliason (Tester) | 75 |
| Developer 2 (TBD) | 175 |
| Developer 3 (TBD) | 175 |
| Trainer 1 | 75 |
| End User 1 | 75 |
| End User 2 | 75 |
| ERP Expert 1 | 175 |
| ERP Expert 2 | 175 |
| Developer 4 | 175 |
| Developer 5 | 175 |

## Schedule

| ID | WBS | Task | Duration | Start | Finish | Predecessors | Total slack | Free slack | Constraint | Resources | Work | Cost |
| --- | --- | --- | --- | --- | --- | --- | --- | --- | --- | --- | --- | --- |
| 1 | 1 | **Overall Project** | 135d | 2018-05-29 08:00 | 2018-12-07 17:00 |  |  |  |  |  | 11492.8h | 1,300,676.79 |
| 2 | 1.1 | **Project Management** | 233.5d? | 2018-06-08 08:00 | 2019-05-13 12:00 |  | 52.5d |  |  |  | 1176h | 88,353.33 |
| 3 | 1.1.1 | Manage Project | 137d | 2018-08-14 08:52 | 2019-03-06 13:52 | 123FF | 52.89d | 0d |  | Chris Johnson (Project Manager) [90%] | 986.4h | 73,980 |
| 4 | 1.1.2 | Establish WBS Estimates | 4d? | 2019-03-11 08:52 | 2019-03-15 08:52 | 3SS | 53.89d | 0d | start no earlier than 2018-05-29 08:00 | Chris Johnson (Project Manager) | 32h | 2,400 |
| 5 | 1.1.3 | Set Acceptance Criteria for Deliverables | 2d | 2019-03-15 08:52 | 2019-03-19 08:52 | 4 | 53.89d | 1.89d |  | Chris Johnson (Project Manager) | 16h | 1,200 |
| 6 | 1.1.4 | Kickoff Meeting | 0.5d | 2019-05-13 08:00 | 2019-05-13 12:00 | 5 | 52.5d |  |  | Chris Johnson (Project Manager); Developer 1 (TBD); Developer 2 (TBD); Developer 3 (TBD); Developer 4; Developer 5; End User 1; End User 2; ERP Expert 1; ERP Expert 2; Kara Siposki (Test Lead); Marc Sanders (Development Lead); Rick Burke (Infrastructure Lead); Ryan Neff (Functional Lead); Sanjay Vohra (DBA); Stacy Lyle (Functional Analyst); Todd Eliason (Tester); Trainer 1 | 4h | 453.33 |
| 7 | 1.1.5 | **Progress Review Team Meeting** | 126.1d | 2018-06-08 08:00 | 2018-12-07 08:48 |  | 159.9d |  |  |  | 21.6h | 1,620 |
| 8 | 1.1.5.1 | Progress Review Team Meeting 1 | 0.1d | 2018-06-08 08:00 | 2018-06-08 08:48 |  | 285.9d |  | start no earlier than 2018-06-08 08:00 | Chris Johnson (Project Manager) | 0.8h | 60 |
| 9 | 1.1.5.2 | Progress Review Team Meeting 2 | 0.1d | 2018-06-15 08:00 | 2018-06-15 08:48 |  | 280.9d |  | start no earlier than 2018-06-15 08:00 | Chris Johnson (Project Manager) | 0.8h | 60 |
| 10 | 1.1.5.3 | Progress Review Team Meeting 3 | 0.1d | 2018-06-22 08:00 | 2018-06-22 08:48 |  | 275.9d |  | start no earlier than 2018-06-22 08:00 | Chris Johnson (Project Manager) | 0.8h | 60 |
| 11 | 1.1.5.4 | Progress Review Team Meeting 4 | 0.1d | 2018-06-29 08:00 | 2018-06-29 08:48 |  | 270.9d |  | start no earlier than 2018-06-29 08:00 | Chris Johnson (Project Manager) | 0.8h | 60 |
| 12 | 1.1.5.5 | Progress Review Team Meeting 5 | 0.1d | 2018-07-06 08:00 | 2018-07-06 08:48 |  | 266.9d |  | start no earlier than 2018-07-06 08:00 | Chris Johnson (Project Manager) | 0.8h | 60 |
| 13 | 1.1.5.6 | Progress Review Team Meeting 6 | 0.1d | 2018-07-13 08:00 | 2018-07-13 08:48 |  | 261.9d |  | start no earlier than 2018-07-13 08:00 | Chris Johnson (Project Manager) | 0.8h | 60 |
| 14 | 1.1.5.7 | Progress Review Team Meeting 7 | 0.1d | 2018-07-20 08:00 | 2018-07-20 08:48 |  | 256.9d |  | start no earlier than 2018-07-20 08:00 | Chris Johnson (Project Manager) | 0.8h | 60 |
| 15 | 1.1.5.8 | Progress Review Team Meeting 8 | 0.1d | 2018-07-27 08:00 | 2018-07-27 08:48 |  | 251.9d |  | start no earlier than 2018-07-27 08:00 | Chris Johnson (Project Manager) | 0.8h | 60 |
| 16 | 1.1.5.9 | Progress Review Team Meeting 9 | 0.1d | 2018-08-03 08:00 | 2018-08-03 08:48 |  | 246.9d |  | start no earlier than 2018-08-03 08:00 | Chris Johnson (Project Manager) | 0.8h | 60 |
| 17 | 1.1.5.10 | Progress Review Team Meeting 10 | 0.1d | 2018-08-10 08:00 | 2018-08-10 08:48 |  | 241.9d |  | start no earlier than 2018-08-10 08:00 | Chris Johnson (Project Manager) | 0.8h | 60 |
| 18 | 1.1.5.11 | Progress Review Team Meeting 11 | 0.1d | 2018-08-17 08:00 | 2018-08-17 08:48 |  | 236.9d |  | start no earlier than 2018-08-17 08:00 | Chris Johnson (Project Manager) | 0.8h | 60 |
| 19 | 1.1.5.12 | Progress Review Team Meeting 12 | 0.1d | 2018-08-24 08:00 | 2018-08-24 08:48 |  | 231.9d |  | start no earlier than 2018-08-24 08:00 | Chris Johnson (Project Manager) | 0.8h | 60 |
| 20 | 1.1.5.13 | Progress Review Team Meeting 13 | 0.1d | 2018-08-31 08:00 | 2018-08-31 08:48 |  | 226.9d |  | start no earlier than 2018-08-31 08:00 | Chris Johnson (Project Manager) | 0.8h | 60 |
| 21 | 1.1.5.14 | Progress Review Team Meeting 14 | 0.1d | 2018-09-07 08:00 | 2018-09-07 08:48 |  | 222.9d |  | start no earlier than 2018-09-07 08:00 | Chris Johnson (Project Manager) | 0.8h | 60 |
| 22 | 1.1.5.15 | Progress Review Team Meeting 15 | 0.1d | 2018-09-14 08:00 | 2018-09-14 08:48 |  | 217.9d |  | start no earlier than 2018-09-14 08:00 | Chris Johnson (Project Manager) | 0.8h | 60 |
| 23 | 1.1.5.16 | Progress Review Team Meeting 16 | 0.1d | 2018-09-21 08:00 | 2018-09-21 08:48 |  | 212.9d |  | start no earlier than 2018-09-21 08:00 | Chris Johnson (Project Manager) | 0.8h | 60 |
| 24 | 1.1.5.17 | Progress Review Team Meeting 17 | 0.1d | 2018-09-28 08:00 | 2018-09-28 08:48 |  | 207.9d |  | start no earlier than 2018-09-28 08:00 | Chris Johnson (Project Manager) | 0.8h | 60 |
| 25 | 1.1.5.18 | Progress Review Team Meeting 18 | 0.1d | 2018-10-05 08:00 | 2018-10-05 08:48 |  | 202.9d |  | start no earlier than 2018-10-05 08:00 | Chris Johnson (Project Manager) | 0.8h | 60 |
| 26 | 1.1.5.19 | Progress Review Team Meeting 19 | 0.1d | 2018-10-12 08:00 | 2018-10-12 08:48 |  | 197.9d |  | start no earlier than 2018-10-12 08:00 | Chris Johnson (Project Manager) | 0.8h | 60 |
| 27 | 1.1.5.20 | Progress Review Team Meeting 20 | 0.1d | 2018-10-19 08:00 | 2018-10-19 08:48 |  | 192.9d |  | start no earlier than 2018-10-19 08:00 | Chris Johnson (Project Manager) | 0.8h | 60 |
| 28 | 1.1.5.21 | Progress Review Team Meeting 21 | 0.1d | 2018-10-26 08:00 | 2018-10-26 08:48 |  | 187.9d |  | start no earlier than 2018-10-26 08:00 | Chris Johnson (Project Manager) | 0.8h | 60 |
| 29 | 1.1.5.22 | Progress Review Team Meeting 22 | 0.1d | 2018-11-02 08:00 | 2018-11-02 08:48 |  | 182.9d |  | start no earlier than 2018-11-02 08:00 | Chris Johnson (Project Manager) | 0.8h | 60 |
| 30 | 1.1.5.23 | Progress Review Team Meeting 23 | 0.1d | 2018-11-09 08:00 | 2018-11-09 08:48 |  | 177.9d |  | start no earlier than 2018-11-09 08:00 | Chris Johnson (Project Manager) | 0.8h | 60 |
| 31 | 1.1.5.24 | Progress Review Team Meeting 24 | 0.1d | 2018-11-16 08:00 | 2018-11-16 08:48 |  | 172.9d |  | start no earlier than 2018-11-16 08:00 | Chris Johnson (Project Manager) | 0.8h | 60 |
| 32 | 1.1.5.25 | Progress Review Team Meeting 25 | 0.1d | 2018-11-26 08:00 | 2018-11-26 08:48 |  | 168.9d |  | start no earlier than 2018-11-23 08:00 | Chris Johnson (Project Manager) | 0.8h | 60 |
| 33 | 1.1.5.26 | Progress Review Team Meeting 26 | 0.1d | 2018-11-30 08:00 | 2018-11-30 08:48 |  | 164.9d |  | start no earlier than 2018-11-30 08:00 | Chris Johnson (Project Manager) | 0.8h | 60 |
| 34 | 1.1.5.27 | Progress Review Team Meeting 27 | 0.1d | 2018-12-07 08:00 | 2018-12-07 08:48 |  | 159.9d |  | start no earlier than 2018-12-07 08:00 | Chris Johnson (Project Manager) | 0.8h | 60 |

| ID | WBS | Task | Duration | Start | Finish | Predecessors | Total slack | Free slack | Constraint | Resources | Work | Cost |
| --- | --- | --- | --- | --- | --- | --- | --- | --- | --- | --- | --- | --- |
| 35 | 1.1.6 | **Update Sponsors** | 146.1d | 2018-07-02 08:00 | 2019-02-01 08:48 |  | 123.9d |  |  |  | 6.4h | 480 |
| 36 | 1.1.6.1 | Update Sponsors 1 | 0.1d | 2018-07-02 08:00 | 2018-07-02 08:48 |  | 269.9d |  | start no earlier than 2018-07-01 08:00 | Chris Johnson (Project Manager) | 0.8h | 60 |
| 37 | 1.1.6.2 | Update Sponsors 2 | 0.1d | 2018-08-01 08:00 | 2018-08-01 08:48 |  | 248.9d |  | start no earlier than 2018-08-01 08:00 | Chris Johnson (Project Manager) | 0.8h | 60 |
| 38 | 1.1.6.3 | Update Sponsors 3 | 0.1d | 2018-09-04 08:00 | 2018-09-04 08:48 |  | 225.9d |  | start no earlier than 2018-09-01 08:00 | Chris Johnson (Project Manager) | 0.8h | 60 |
| 39 | 1.1.6.4 | Update Sponsors 4 | 0.1d | 2018-10-01 08:00 | 2018-10-01 08:48 |  | 206.9d |  | start no earlier than 2018-10-01 08:00 | Chris Johnson (Project Manager) | 0.8h | 60 |
| 40 | 1.1.6.5 | Update Sponsors 5 | 0.1d | 2018-11-01 08:00 | 2018-11-01 08:48 |  | 183.9d |  | start no earlier than 2018-11-01 08:00 | Chris Johnson (Project Manager) | 0.8h | 60 |
| 41 | 1.1.6.6 | Update Sponsors 6 | 0.1d | 2018-12-03 08:00 | 2018-12-03 08:48 |  | 163.9d |  | start no earlier than 2018-12-01 08:00 | Chris Johnson (Project Manager) | 0.8h | 60 |
| 42 | 1.1.6.7 | Update Sponsors 7 | 0.1d | 2019-01-02 08:00 | 2019-01-02 08:48 |  | 145.9d |  | start no earlier than 2019-01-01 08:00 | Chris Johnson (Project Manager) | 0.8h | 60 |
| 43 | 1.1.6.8 | Update Sponsors 8 | 0.1d | 2019-02-01 08:00 | 2019-02-01 08:48 |  | 123.9d |  | start no earlier than 2019-02-01 08:00 | Chris Johnson (Project Manager) | 0.8h | 60 |
| 44 | 1.1.7 | Document project progress | 137d | 2018-09-04 08:00 | 2019-04-02 08:04 | 123FF | 81.99d |  |  | Chris Johnson (Project Manager) [10%] | 109.6h | 8,220 |
| 45 | 1.2 | **System Requirements** | 13.33d | 2018-05-29 08:00 | 2018-06-15 10:38 |  |  |  |  |  | 303.92h | 22,794 |
| 46 | 1.2.1 | Gather Business Requirements | 4d | 2018-05-29 08:00 | 2018-06-01 17:00 |  | -44.37d | 0d |  | Ryan Neff (Functional Lead); Stacy Lyle (Functional Analyst) | 64h | 4,800 |
| 47 | 1.2.2 | Design Business Process Flows | 2d | 2018-06-04 08:00 | 2018-06-05 17:00 | 46 | -44.37d | 0d |  | Ryan Neff (Functional Lead); Stacy Lyle (Functional Analyst) | 32h | 2,400 |
| 48 | 1.2.3 | Document Business Process Flows | 0.5d | 2018-06-13 08:00 | 2018-06-13 12:00 | 47 | 282.5d |  |  | Ryan Neff (Functional Lead); Stacy Lyle (Functional Analyst) | 8h | 600 |
| 49 | 1.2.4 | Finalize Technical Requirements | 6d | 2018-05-29 08:00 | 2018-06-05 17:00 |  | 18.17d | 5d |  | Rick Burke (Infrastructure Lead) | 48h | 3,600 |
| 50 | 1.2.5 | Create Operational Requirements | 5d | 2018-06-06 08:00 | 2018-06-12 17:00 | 46, 47 | -44.37d | 0d |  | Ryan Neff (Functional Lead); Stacy Lyle (Functional Analyst); Rick Burke (Infrastructure Lead) | 120h | 9,000 |
| 51 | 1.2.6 | Identify Technical Infrastructure Needs | 2d | 2018-06-13 08:00 | 2018-06-14 17:00 | 49, 50 | 13.17d | 0d |  | Rick Burke (Infrastructure Lead) | 16h | 1,200 |
| 52 | 1.2.7 | Document Requirements | 0.33d | 2018-06-19 08:00 | 2018-06-19 10:38 | 46, 49, 50, 53 | 278.67d |  |  | Rick Burke (Infrastructure Lead); Stacy Lyle (Functional Analyst); Ryan Neff (Functional Lead) | 7.92h | 594 |
| 53 | 1.2.8 | Acceptance Criteria Buffer | 2d | 2018-06-15 08:00 | 2018-06-18 17:00 | 51 | 278.67d | 0d |  | Stacy Lyle (Functional Analyst) [50%] | 8h | 600 |
| 54 | 1.3 | **Software Requirements** | 19.5d | 2018-06-15 08:00 | 2018-07-13 12:00 |  |  |  |  |  | 360h | 27,000 |
| 55 | 1.3.1 | **Create Functional Requirements** | 19.5d | 2018-06-15 08:00 | 2018-07-13 12:00 | 46, 47, 50 |  |  |  |  | 216h | 16,200 |
| 56 | 1.3.1.1 | Capture Customer Profile | 4d | 2018-06-28 08:00 | 2018-07-03 17:00 |  | -52.37d | 0d |  | Ryan Neff (Functional Lead) | 32h | 2,400 |
| 57 | 1.3.1.2 | View and Search Product Catalog | 6d | 2018-06-19 10:38 | 2018-06-27 10:38 |  | -48.7d | 0d |  | Ryan Neff (Functional Lead) | 48h | 3,600 |
| 58 | 1.3.1.3 | Updating and Calculating Shopping Cart | 3d | 2018-06-27 10:38 | 2018-07-09 10:38 | 57 | -48.7d | 0d |  | Ryan Neff (Functional Lead) | 24h | 1,800 |
| 59 | 1.3.1.4 | Taking Payments | 6d | 2018-06-19 10:38 | 2018-07-03 10:38 |  | -45.7d | 0d |  | Stacy Lyle (Functional Analyst) | 48h | 3,600 |
| 60 | 1.3.1.5 | Submit Order | 8d | 2018-07-09 10:38 | 2018-08-16 10:38 | 56, 57, 58, 59 | -48.7d | 0d |  | Ryan Neff (Functional Lead) [50%] | 32h | 2,400 |
| 61 | 1.3.1.6 | Check Order History & Order Status | 3d | 2018-08-16 10:38 | 2018-08-21 13:14 | 60 | -48.7d | 0d |  | Ryan Neff (Functional Lead) | 24h | 1,800 |
| 62 | 1.3.1.7 | Document Functional requirements | 1d | 2018-08-21 13:14 | 2018-09-21 09:36 | 56, 57, 58, 59, 60, 61 | -48.7d | 0d |  | Ryan Neff (Functional Lead); Stacy Lyle (Functional Analyst) | 8h | 600 |
| 63 | 1.3.2 | Create Data Requirements | 3d | 2018-07-05 08:00 | 2018-09-25 15:57 | 56, 57 | -52.37d | 0d |  | Stacy Lyle (Functional Analyst) | 24h | 1,800 |
| 64 | 1.3.3 | Create ERP Interface Requirements | 7d | 2018-07-09 10:38 | 2018-08-24 10:38 | 60SS | -30.83d | 0d |  | Stacy Lyle (Functional Analyst) | 56h | 4,200 |
| 65 | 1.3.4 | Create User Interface Requirements | 4d | 2018-06-25 08:00 | 2018-06-28 17:00 | 55SS | 8.5d |  |  | Stacy Lyle (Functional Analyst) | 32h | 2,400 |
| 66 | 1.3.5 | Document Data, ERP Interface and User Interface Requiremnts | 1d | 2018-09-25 15:57 | 2018-09-26 15:57 | 63, 64, 65 | -52.37d | 0d |  | Stacy Lyle (Functional Analyst) | 8h | 600 |
| 67 | 1.3.6 | Acceptance Criteria Buffer | 2d | 2018-06-15 08:00 | 2018-06-18 17:00 |  | 17.5d |  |  | Stacy Lyle (Functional Analyst) [50%] | 8h | 600 |
| 68 | 1.3.7 | Procuring Infrastructure | 2d | 2018-06-15 08:00 | 2018-06-18 17:00 |  | 17.5d |  |  | Ryan Neff (Functional Lead) [50%]; Sanjay Vohra (DBA) [50%] | 16h | 1,200 |

| ID | WBS | Task | Duration | Start | Finish | Predecessors | Total slack | Free slack | Resources | Work | Cost |
| --- | --- | --- | --- | --- | --- | --- | --- | --- | --- | --- | --- |
| 69 | 1.4 | **Detailed Design** | 55.2d | 2018-07-13 13:00 | 2018-10-01 14:36 | 54 | 0d |  |  | 792h | 75,384 |
| 70 | 1.4.1 | Design Capture Customer Profile Pages & Components | 11d | 2018-07-13 13:00 | 2018-08-02 12:00 |  | 0d |  | Marc Sanders (Development Lead); Ryan Neff (Functional Lead) [50%] | 108h | 8,100 |
| 71 | 1.4.2 | Design View and Search Product Catalog Pages & Components | 9d | 2018-07-13 13:00 | 2018-07-26 17:00 |  | 1.5d | 0d | Developer 1 (TBD); Ryan Neff (Functional Lead) [50%] | 108h | 14,580 |
| 72 | 1.4.3 | Design Updating and Calculating Shopping Cart | 3d | 2018-07-27 08:00 | 2018-07-31 17:00 | 71 | 1.5d |  | Developer 1 (TBD); Ryan Neff (Functional Lead) | 48h | 5,760 |
| 73 | 1.4.4 | Design Taking Payments Pages & Components | 6d | 2018-07-13 13:00 | 2018-07-31 12:00 |  | 2d |  | Marc Sanders (Development Lead); Stacy Lyle (Functional Analyst) | 48h | 3,600 |
| 74 | 1.4.5 | Design Submit Order Pages & Components | 8d | 2018-08-02 13:00 | 2018-08-14 12:00 | 70, 71, 72, 73 | 0.67d | 0d | Marc Sanders (Development Lead); Ryan Neff (Functional Lead) | 128h | 9,600 |
| 75 | 1.4.6 | Design check Order History & Order Status Pages & Components | 3.5d | 2018-08-14 13:00 | 2018-08-27 15:38 | 74 | 0.67d | 0d | Marc Sanders (Development Lead); Ryan Neff (Functional Lead) | 32h | 2,400 |
| 76 | 1.4.7 | Design Logical & Physical Data Model | 12d | 2018-07-13 13:00 | 2018-07-31 17:00 |  | 4.5d |  | Sanjay Vohra (DBA); Stacy Lyle (Functional Analyst) | 144h | 10,800 |
| 77 | 1.4.8 | Design ERP Interface | 18d | 2018-08-02 13:00 | 2018-08-28 12:00 | 70, 71, 72, 73 | 0d |  | Developer 1 (TBD) [66.7%]; Stacy Lyle (Functional Analyst) [66.7%] | 160h | 19,200 |
| 78 | 1.4.9 | Document the design of all modules | 0.6d | 2018-08-28 13:00 | 2018-10-01 14:36 | 70, 71, 72, 73, 74, 75, 76, 77 | 0d |  | Ryan Neff (Functional Lead); Stacy Lyle (Functional Analyst); Developer 1 (TBD); Marc Sanders (Development Lead); Sanjay Vohra (DBA) | 8h | 744 |
| 79 | 1.4.10 | Acceptance Criteria Buffer | 2d | 2018-07-13 13:00 | 2018-07-17 12:00 |  | 53.2d |  | Ryan Neff (Functional Lead) [50%] | 8h | 600 |
| 80 | 1.5 | **Test Planning** | 80.87d | 2018-07-13 13:00 | 2018-11-06 10:56 |  | 0d |  |  | 452h | 33,900 |
| 81 | 1.5.1 | Gather Testing Requirements | 7d | 2018-07-13 13:00 | 2018-07-24 17:00 | 55 | 47.7d | 28.5d | Kara Siposki (Test Lead); Todd Eliason (Tester) | 112h | 8,400 |
| 82 | 1.5.2 | Create System Test Plan & Test Cases | 10d | 2018-10-01 14:36 | 2018-10-15 14:36 | 81, 69 | 0d |  | Kara Siposki (Test Lead); Todd Eliason (Tester) | 160h | 12,000 |
| 83 | 1.5.3 | Write System Test Scripts | 14.67d | 2018-10-16 14:36 | 2018-11-06 10:56 | 84 | 0d |  | Kara Siposki (Test Lead); Todd Eliason (Tester) | 176h | 13,200 |
| 84 | 1.5.4 | Acceptance Criteria Buffer | 1d | 2018-10-15 14:36 | 2018-10-16 14:36 | 82 | 0d |  | Kara Siposki (Test Lead) [50%] | 4h | 300 |
| 85 | 1.6 | **Technical Infrastructure** | 281d? | 2018-06-15 08:00 | 2019-07-24 17:00 |  | 0d |  |  | 1132.8h | 110,560 |
| 86 | 1.6.1 | Create Development Environment | 20d | 2018-06-15 08:00 | 2018-07-16 10:38 | 51 | 13.17d | 0d | Rick Burke (Infrastructure Lead) | 160h | 12,000 |
| 87 | 1.6.2 | Create Testing Environment | 38d | 2018-07-16 10:38 | 2018-09-07 10:38 | 86 | 176.17d | 0d | Rick Burke (Infrastructure Lead) [90%] | 273.6h | 20,520 |
| 88 | 1.6.3 | Support Development Environment | 38d | 2018-07-16 10:38 | 2018-09-07 10:38 | 86 | 222.17d |  | Rick Burke (Infrastructure Lead) [10%] | 30.4h | 2,280 |
| 89 | 1.6.4 | Support Testing Environment & Deployment | 46d | 2018-09-07 10:38 | 2018-11-12 10:38 | 87 | 176.17d |  | Rick Burke (Infrastructure Lead) | 368h | 27,600 |
| 90 | 1.6.5 | Support Database | 46d | 2018-09-20 13:00 | 2018-11-27 12:00 | 106 | 0d |  | Sanjay Vohra (DBA) [10%] | 36.8h | 2,760 |
| 91 | 1.6.6 | Security and Maintenance: Add web application and real-time backups | 7d | 2018-12-07 10:56 | 2019-01-03 10:56 | 90 | 0d |  | ERP Expert 1 | 56h | 9,800 |
| 92 | 1.6.7 | Security and Maintenance: Data Loss Prevention Infrastructure | 6d | 2019-01-03 10:56 | 2019-01-11 10:56 | 91 | 0d |  | ERP Expert 2 | 48h | 8,400 |
| 93 | 1.6.8 | Security and Maintenance: Setup Authentication | 6d | 2019-01-11 10:56 | 2019-04-15 10:56 | 92 | 0d |  | ERP Expert 1 | 48h | 8,400 |
| 94 | 1.6.9 | Security and Maintenance: Threat Intelligence | 6d | 2019-04-15 10:56 | 2019-04-23 10:56 | 93 | 0d |  | ERP Expert 1 | 48h | 8,400 |
| 95 | 1.6.10 | Security and Maintenance: Identity and Access Management | 6d | 2019-04-23 10:56 | 2019-05-01 10:56 | 94 | 0d |  | ERP Expert 2 | 48h | 8,400 |
| 96 | 1.6.11 | Document Technical infrastructure details | 0.5d | 2019-07-24 13:00 | 2019-07-24 17:00 | 86, 87, 88, 89, 97 | 0d |  | Rick Burke (Infrastructure Lead); Sanjay Vohra (DBA) | 8h | 600 |
| 97 | 1.6.12 | Acceptance Criteria Buffer | 1d? | 2019-07-23 13:00 | 2019-07-24 12:00 | 95 | 0d |  | ERP Expert 1 | 8h | 1,400 |

| ID | WBS | Task | Duration | Start | Finish | Predecessors | Total slack | Free slack | Resources | Work | Cost |
| --- | --- | --- | --- | --- | --- | --- | --- | --- | --- | --- | --- |
| 98 | 1.7 | **Development & Unit Test** | 84.2d | 2018-08-02 13:00 | 2018-12-03 14:36 | 86 | 0d |  |  | 1612.24h | 223,110.8 |
| 99 | 1.7.1 | Train developers | 3d | 2018-08-02 13:00 | 2018-08-07 12:00 | 70 | 0d |  | Trainer 1; Developer 1 (TBD); Developer 2 (TBD); Developer 3 (TBD) | 96h | 14,160 |
| 100 | 1.7.2 | Build Capture Customer Profile Pages & Components | 13d | 2018-08-07 13:00 | 2018-09-04 12:00 | 70, 99 | 27.58d | 0d | Developer 2 (TBD) | 104h | 18,200 |
| 101 | 1.7.3 | Build View and Search Product Catalog Pages & Components | 12d | 2018-08-07 13:00 | 2018-08-23 12:00 | 71, 99 | 27.58d | 0d | Developer 3 (TBD) | 96h | 16,800 |
| 102 | 1.7.4 | Build Updating and Calculating Shopping Cart | 7d | 2018-08-23 13:00 | 2018-09-04 12:00 | 72, 101, 99 | 27.58d | 0d | Developer 3 (TBD) | 56h | 9,800 |
| 103 | 1.7.5 | Build Taking Payments Pages & Components | 6d | 2018-08-10 13:00 | 2018-08-20 12:00 | 73, 99 | 37.58d | 10d | Developer 2 (TBD) | 48h | 8,400 |
| 104 | 1.7.6 | Build Submit Order Pages & Components | 12d | 2018-09-04 13:00 | 2018-09-20 12:00 | 74, 100, 101, 102, 103, 99 | 27.58d | 2d | Developer 2 (TBD); Developer 3 (TBD) | 192h | 33,600 |
| 105 | 1.7.7 | Build Check Order History & Order Status Pages & Components | 6d | 2018-08-27 15:38 | 2018-09-24 08:14 | 75, 99 | 26.05d | 0.47d | Marc Sanders (Development Lead) | 48h | 3,600 |
| 106 | 1.7.8 | Build Logical & Physical Data Model | 31d | 2018-08-07 13:00 | 2018-09-20 12:00 | 76, 99 | 0d |  | Sanjay Vohra (DBA) [50%] | 124h | 9,300 |
| 107 | 1.7.9 | Build ERP Interface | 18d | 2018-08-28 13:00 | 2018-09-24 12:00 | 77, 99 | 25.58d | 0d | Developer 1 (TBD) | 144h | 23,760 |
| 108 | 1.7.10 | Support Development & Assembly Test | 23d | 2018-10-01 14:36 | 2018-11-01 14:36 | 69, 99 | 163.3d | 0d | Ryan Neff (Functional Lead); Stacy Lyle (Functional Analyst) | 368h | 27,600 |
| 109 | 1.7.11 | Security and Manintenance Unit Testing | 20d | 2018-11-01 14:36 | 2018-12-03 14:36 | 108 | 163.3d |  | ERP Expert 1; ERP Expert 2 | 320h | 56,000 |
| 110 | 1.7.12 | Document development work and best practices | 0.29d | 2018-09-24 13:00 | 2018-09-24 15:19 | 100, 101, 102, 103, 104, 105, 106, 107 | 211.21d |  | Developer 1 (TBD); Developer 2 (TBD); Developer 3 (TBD); Stacy Lyle (Functional Analyst); Sanjay Vohra (DBA); Marc Sanders (Development Lead); Ryan Neff (Functional Lead) | 16.24h | 1,890.8 |
| 111 | 1.8 | **Testing** | 101.53d | 2018-09-04 13:00 | 2019-02-01 08:14 |  | 0d |  |  | 2319.84h | 280,433.6 |
| 112 | 1.8.1 | **Perform Assembly Testing** | 19.29d | 2018-09-04 13:00 | 2018-10-01 15:19 | 81 | 25.58d |  |  | 256h | 30,800 |
| 113 | 1.8.1.1 | Perform Phase 1 Testing | 12d | 2018-09-04 13:00 | 2018-09-20 12:00 | 100, 101, 102 | 27.58d | 2d | Marc Sanders (Development Lead) | 96h | 7,200 |
| 114 | 1.8.1.2 | Perform Phase 2 Testing | 5.29d | 2018-09-24 13:00 | 2018-10-01 15:19 | 103, 104, 105, 113, 106, 107 | 25.58d |  | Marc Sanders (Development Lead); Developer 1 (TBD); Developer 2 (TBD); Developer 3 (TBD) | 160h | 23,600 |
| 115 | 1.8.2 | Perform System Testing | 36.33d | 2018-11-06 10:56 | 2019-01-09 14:36 | 112, 82, 83 | 0d |  | Developer 1 (TBD); Developer 2 (TBD); Developer 3 (TBD); Kara Siposki (Test Lead); Marc Sanders (Development Lead); Ryan Neff (Functional Lead); Stacy Lyle (Functional Analyst); Todd Eliason (Tester); ERP Expert 1; ERP Expert 2 | 1280h | 158,720 |
| 116 | 1.8.3 | Perform Validation Testing | 8d | 2019-01-09 14:36 | 2019-01-21 14:36 | 115 | 0d |  | Kara Siposki (Test Lead); Todd Eliason (Tester); Marc Sanders (Development Lead); Developer 1 (TBD); Developer 2 (TBD); Developer 3 (TBD); Ryan Neff (Functional Lead); Stacy Lyle (Functional Analyst); End User 1; End User 2 | 640h | 66,560 |
| 117 | 1.8.4 | Security and Maintenance Testing | 8d | 2019-01-21 14:36 | 2019-01-31 14:36 | 116 | 0d |  | ERP Expert 1; ERP Expert 2 | 128h | 22,400 |
| 118 | 1.8.5 | Document tests and test results | 0.33d | 2019-01-31 14:36 | 2019-02-01 08:14 | 112, 115, 117 | 0d |  | Developer 1 (TBD); Developer 2 (TBD); Developer 3 (TBD); Kara Siposki (Test Lead); Stacy Lyle (Functional Analyst); Todd Eliason (Tester) | 15.84h | 1,953.6 |
| 119 | 1.9 | **Deployment** | 23.58d | 2019-02-01 08:14 | 2019-03-06 13:52 | 111 | 0d |  |  | 1424h | 151,141.05 |
| 120 | 1.9.1 | Implement System | 10d | 2019-02-01 08:14 | 2019-02-15 08:14 |  | 0d |  | Kara Siposki (Test Lead); Todd Eliason (Tester); Marc Sanders (Development Lead); Developer 1 (TBD); Developer 2 (TBD); Developer 3 (TBD); Ryan Neff (Functional Lead); Stacy Lyle (Functional Analyst) | 640h | 71,200 |
| 121 | 1.9.2 | Deploy To Production | 1d | 2019-02-15 08:14 | 2019-02-18 08:14 | 120 | 0d |  | Kara Siposki (Test Lead); Todd Eliason (Tester); Marc Sanders (Development Lead); Developer 1 (TBD); Developer 2 (TBD); Developer 3 (TBD); Ryan Neff (Functional Lead); Stacy Lyle (Functional Analyst) | 64h | 7,120 |
| 122 | 1.9.3 | Acceptance Criteria Buffer | 1d | 2019-02-18 08:14 | 2019-02-19 08:14 | 121 | 12.39d | 0d |  |  |  |
| 123 | 1.9.4 | Project Wrap up | 11.58d | 2019-02-19 08:14 | 2019-03-06 13:52 | 122 | 12.39d | 0d | Developer 1 (TBD); Developer 2 (TBD); Developer 3 (TBD); Kara Siposki (Test Lead); Marc Sanders (Development Lead); Ryan Neff (Functional Lead); Stacy Lyle (Functional Analyst); Todd Eliason (Tester); Rick Burke (Infrastructure Lead) | 720h | 72,821.05 |

| ID | WBS | Task | Duration | Start | Finish | Predecessors | Total slack | Resources | Work | Cost |
| --- | --- | --- | --- | --- | --- | --- | --- | --- | --- | --- |
| 124 | 1.10 | **Post-Installation Maintenance and Support** | 112.84d | 2019-02-18 08:14 | 2019-07-24 15:56 | 121 | 0d |  | 1920h | 288,000 |
| 125 | 1.10.1 | Maintenance Post-Installation | 70.7d | 2019-02-18 08:14 | 2019-05-28 09:36 |  | 0d | Sanjay Vohra (DBA); ERP Expert 1 | 960h | 120,000 |
| 126 | 1.10.2 | Support Post-Installation | 60d | 2019-05-01 10:56 | 2019-07-24 15:56 | 125FF | 0.13d | ERP Expert 2; Developer 5 | 960h | 168,000 |
