# INST706_Project_Step1

Schedule from MS Project, 2018-05-29 to 2019-02-05, costs in $.
Toshiba

## Calendars

- Standard: Mon-Fri 08:00-12:00, 13:00-17:00; Sat-Sun off. Exceptions (off unless hours are given): 2018-07-04 (Independence Day), 2018-09-03 (Labor Day), 2018-11-22 to 2018-11-23 (Thanksgiving), 2018-12-08 to 2018-12-23 08:00-12:00, 13:00-17:00 (Weekends 1), 2018-12-24 to 2018-12-25 (Christmas), 2018-12-26 to 2018-12-30 08:00-12:00, 13:00-17:00 (Weekends 2), 2018-12-31 to 2019-01-01 (New Years), 2019-01-02 to 2019-02-25 08:00-12:00, 13:00-17:00 (Weekends 3).

## Resources

| Resource | Rate |
| --- | --- |
| Chris Johnson (Project Manager) | 75 |
| Ryan Neff (Functional Lead) | 75 |
| Stacy Lyle (Functional Analyst) | 75 |
| Rick Burke (Infrastructure Lead) | 75 |
| Marc Sanders (Development Lead) | 75 |
| Developer 1 (TBD) | 165 |
| Sanjay Vohra (DBA) | 75 |
| Kara Siposki (Test Lead) | 75 |
| Todd Eliason (Tester) | 75 |
| Developer 2 (TBD) | 175 |
| Developer 3 (TBD) | 175 |
| Trainer 1 | 75 |
| End User 1 | 75 |
| End User 2 | 75 |
| ERP Expert 1 | 175 |
| EPR Expert 2 | 175 |
| Developer 4 | 175 |
| Developer 5 | 175 |

## Schedule

| ID | WBS | Task | Duration | Start | Finish | Predecessors | Total slack | Constraint | Resources | Work | Cost |
| --- | --- | --- | --- | --- | --- | --- | --- | --- | --- | --- | --- |
| 1 | 1 | **Overall Project** | 135d | 2018-05-29 08:00 | 2018-12-07 17:00 |  |  |  |  | 11435.2h | 1,281,203.45 |
| 2 | 1.1 | **Project Management** | 140.58d? | 2018-05-31 08:00 | 2018-12-15 13:37 |  | 48.42d |  |  | 1226.4h | 94,740 |
| 3 | 1.1.1 | Manage Project | 137d | 2018-06-05 13:37 | 2018-12-15 13:37 | 123FF | 48.42d |  | Chris Johnson (Project Manager) [90%] | 986.4h | 73,980 |
| 4 | 1.1.2 | **Progress Review Team Meeting** | 126.1d | 2018-06-08 08:00 | 2018-12-07 08:48 |  | 56.9d |  |  | 21.6h | 1,620 |
| 5 | 1.1.2.1 | Progress Review Team Meeting 1 | 0.1d | 2018-06-08 08:00 | 2018-06-08 08:48 |  | 130.9d | start no earlier than 2018-06-08 08:00 | Chris Johnson (Project Manager) | 0.8h | 60 |
| 6 | 1.1.2.2 | Progress Review Team Meeting 2 | 0.1d | 2018-06-15 08:00 | 2018-06-15 08:48 |  | 125.9d | start no earlier than 2018-06-15 08:00 | Chris Johnson (Project Manager) | 0.8h | 60 |
| 7 | 1.1.2.3 | Progress Review Team Meeting 3 | 0.1d | 2018-06-22 08:00 | 2018-06-22 08:48 |  | 120.9d | start no earlier than 2018-06-22 08:00 | Chris Johnson (Project Manager) | 0.8h | 60 |
| 8 | 1.1.2.4 | Progress Review Team Meeting 4 | 0.1d | 2018-06-29 08:00 | 2018-06-29 08:48 |  | 115.9d | start no earlier than 2018-06-29 08:00 | Chris Johnson (Project Manager) | 0.8h | 60 |
| 9 | 1.1.2.5 | Progress Review Team Meeting 5 | 0.1d | 2018-07-06 08:00 | 2018-07-06 08:48 |  | 110.9d | start no earlier than 2018-07-06 08:00 | Chris Johnson (Project Manager) | 0.8h | 60 |
| 10 | 1.1.2.6 | Progress Review Team Meeting 6 | 0.1d | 2018-07-13 08:00 | 2018-07-13 08:48 |  | 105.9d | start no earlier than 2018-07-13 08:00 | Chris Johnson (Project Manager) | 0.8h | 60 |
| 11 | 1.1.2.7 | Progress Review Team Meeting 7 | 0.1d | 2018-07-20 08:00 | 2018-07-20 08:48 |  | 100.9d | start no earlier than 2018-07-20 08:00 | Chris Johnson (Project Manager) | 0.8h | 60 |
| 12 | 1.1.2.8 | Progress Review Team Meeting 8 | 0.1d | 2018-07-27 08:00 | 2018-07-27 08:48 |  | 95.9d | start no earlier than 2018-07-27 08:00 | Chris Johnson (Project Manager) | 0.8h | 60 |
| 13 | 1.1.2.9 | Progress Review Team Meeting 9 | 0.1d | 2018-08-03 08:00 | 2018-08-03 08:48 |  | 90.9d | start no earlier than 2018-08-03 08:00 | Chris Johnson (Project Manager) | 0.8h | 60 |
| 14 | 1.1.2.10 | Progress Review Team Meeting 10 | 0.1d | 2018-08-10 08:00 | 2018-08-10 08:48 |  | 85.9d | start no earlier than 2018-08-10 08:00 | Chris Johnson (Project Manager) | 0.8h | 60 |
| 15 | 1.1.2.11 | Progress Review Team Meeting 11 | 0.1d | 2018-08-17 08:00 | 2018-08-17 08:48 |  | 80.9d | start no earlier than 2018-08-17 08:00 | Chris Johnson (Project Manager) | 0.8h | 60 |
| 16 | 1.1.2.12 | Progress Review Team Meeting 12 | 0.1d | 2018-08-24 08:00 | 2018-08-24 08:48 |  | 75.9d | start no earlier than 2018-08-24 08:00 | Chris Johnson (Project Manager) | 0.8h | 60 |
| 17 | 1.1.2.13 | Progress Review Team Meeting 13 | 0.1d | 2018-08-31 08:00 | 2018-08-31 08:48 |  | 70.9d | start no earlier than 2018-08-31 08:00 | Chris Johnson (Project Manager) | 0.8h | 60 |
| 18 | 1.1.2.14 | Progress Review Team Meeting 14 | 0.1d | 2018-09-07 08:00 | 2018-09-07 08:48 |  | 65.9d | start no earlier than 2018-09-07 08:00 | Chris Johnson (Project Manager) | 0.8h | 60 |
| 19 | 1.1.2.15 | Progress Review Team Meeting 15 | 0.1d | 2018-09-14 08:00 | 2018-09-14 08:48 |  | 60.9d | start no earlier than 2018-09-14 08:00 | Chris Johnson (Project Manager) | 0.8h | 60 |
| 20 | 1.1.2.16 | Progress Review Team Meeting 16 | 0.1d | 2018-09-21 08:00 | 2018-09-21 08:48 |  | 55.9d | start no earlier than 2018-09-21 08:00 | Chris Johnson (Project Manager) | 0.8h | 60 |
| 21 | 1.1.2.17 | Progress Review Team Meeting 17 | 0.1d | 2018-09-28 08:00 | 2018-09-28 08:48 |  | 51.98d | start no earlier than 2018-09-28 08:00 | Chris Johnson (Project Manager) | 0.8h | 60 |
| 22 | 1.1.2.18 | Progress Review Team Meeting 18 | 0.1d | 2018-10-05 08:00 | 2018-10-05 08:48 |  | 46.98d | start no earlier than 2018-10-05 08:00 | Chris Johnson (Project Manager) | 0.8h | 60 |
| 23 | 1.1.2.19 | Progress Review Team Meeting 19 | 0.1d | 2018-10-12 08:00 | 2018-10-12 08:48 |  | 41.98d | start no earlier than 2018-10-12 08:00 | Chris Johnson (Project Manager) | 0.8h | 60 |
| 24 | 1.1.2.20 | Progress Review Team Meeting 20 | 0.1d | 2018-10-19 08:00 | 2018-10-19 08:48 |  | 36.98d | start no earlier than 2018-10-19 08:00 | Chris Johnson (Project Manager) | 0.8h | 60 |
| 25 | 1.1.2.21 | Progress Review Team Meeting 21 | 0.1d | 2018-10-26 08:00 | 2018-10-26 08:48 |  | 31.98d | start no earlier than 2018-10-26 08:00 | Chris Johnson (Project Manager) | 0.8h | 60 |
| 26 | 1.1.2.22 | Progress Review Team Meeting 22 | 0.1d | 2018-11-02 08:00 | 2018-11-02 08:48 |  | 26.98d | start no earlier than 2018-11-02 08:00 | Chris Johnson (Project Manager) | 0.8h | 60 |
| 27 | 1.1.2.23 | Progress Review Team Meeting 23 | 0.1d | 2018-11-09 08:00 | 2018-11-09 08:48 |  | 85.9d | start no earlier than 2018-11-09 08:00 | Chris Johnson (Project Manager) | 0.8h | 60 |
| 28 | 1.1.2.24 | Progress Review Team Meeting 24 | 0.1d | 2018-11-16 08:00 | 2018-11-16 08:48 |  | 80.9d | start no earlier than 2018-11-16 08:00 | Chris Johnson (Project Manager) | 0.8h | 60 |
| 29 | 1.1.2.25 | Progress Review Team Meeting 25 | 0.1d | 2018-11-26 08:00 | 2018-11-26 08:48 |  | 65.9d | start no earlier than 2018-11-23 08:00 | Chris Johnson (Project Manager) | 0.8h | 60 |
| 30 | 1.1.2.26 | Progress Review Team Meeting 26 | 0.1d | 2018-11-30 08:00 | 2018-11-30 08:48 |  | 70.9d | start no earlier than 2018-11-30 08:00 | Chris Johnson (Project Manager) | 0.8h | 60 |
| 31 | 1.1.2.27 | Progress Review Team Meeting 27 | 0.1d | 2018-12-07 08:00 | 2018-12-07 08:48 |  | 65.9d | start no earlier than 2018-12-07 08:00 | Chris Johnson (Project Manager) | 0.8h | 60 |

| ID | WBS | Task | Duration | Start | Finish | Predecessors | Total slack | Free slack | Constraint | Resources | Work | Cost |
| --- | --- | --- | --- | --- | --- | --- | --- | --- | --- | --- | --- | --- |
| 32 | 1.1.3 | **Update sponsors** | 106.1d | 2018-07-02 08:00 | 2018-12-03 08:48 |  | 60.9d |  |  |  | 4.8h | 360 |
| 33 | 1.1.3.1 | Update sponsors 1 | 0.1d | 2018-07-02 08:00 | 2018-07-02 08:48 |  | 114.9d |  | start no earlier than 2018-07-01 08:00 | Chris Johnson (Project Manager) | 0.8h | 60 |
| 34 | 1.1.3.2 | Update sponsors 2 | 0.1d | 2018-08-01 08:00 | 2018-08-01 08:48 |  | 92.9d |  | start no earlier than 2018-08-01 08:00 | Chris Johnson (Project Manager) | 0.8h | 60 |
| 35 | 1.1.3.3 | Update sponsors 3 | 0.1d | 2018-09-04 08:00 | 2018-09-04 08:48 |  | 122.9d |  | start no earlier than 2018-09-01 08:00 | Chris Johnson (Project Manager) | 0.8h | 60 |
| 36 | 1.1.3.4 | Update sponsors 4 | 0.1d | 2018-10-01 08:00 | 2018-10-01 08:48 |  | 50.98d |  | start no earlier than 2018-10-01 08:00 | Chris Johnson (Project Manager) | 0.8h | 60 |
| 37 | 1.1.3.5 | Update sponsors 5 | 0.1d | 2018-11-01 08:00 | 2018-11-01 08:48 |  | 27.98d |  | start no earlier than 2018-11-01 08:00 | Chris Johnson (Project Manager) | 0.8h | 60 |
| 38 | 1.1.3.6 | Update sponsors 6 | 0.1d | 2018-12-03 08:00 | 2018-12-03 08:48 |  | 69.9d |  | start no earlier than 2018-12-01 08:00 | Chris Johnson (Project Manager) | 0.8h | 60 |
| 39 | 1.1.4 | Establish WBS Estimates | 1d? | 2018-05-31 08:00 | 2018-05-31 17:00 |  | 131d | 0d | start no earlier than 2018-05-31 08:00 | Chris Johnson (Project Manager) | 8h | 600 |
| 40 | 1.1.5 | Set Acceptance Criteria for Deliverables | 2d? | 2018-06-01 08:00 | 2018-06-04 17:00 | 39 | 131d | 0d | start no earlier than 2018-06-01 08:00 | Chris Johnson (Project Manager) | 16h | 1,200 |
| 41 | 1.1.6 | Evaluate Risks | 1d? | 2018-06-05 08:00 | 2018-06-05 17:00 | 40 | 131d | 0d |  | Chris Johnson (Project Manager) | 8h | 600 |
| 42 | 1.1.7 | Prepare Risk Mitigation Plan | 1d? | 2018-06-06 08:00 | 2018-06-06 17:00 | 41 | 131d | 0d |  | Chris Johnson (Project Manager) | 8h | 600 |
| 43 | 1.1.8 | Kickoff Meeting | 0.5d? | 2018-06-07 08:00 | 2018-06-07 12:00 | 42 | 132.58d |  |  | Chris Johnson (Project Manager); Developer 1 (TBD); Developer 2 (TBD); Developer 3 (TBD); Developer 4; Developer 5; EPR Expert 2; ERP Expert 1; Kara Siposki (Test Lead); Marc Sanders (Development Lead); Rick Burke (Infrastructure Lead); Ryan Neff (Functional Lead); Sanjay Vohra (DBA); Stacy Lyle (Functional Analyst); Todd Eliason (Tester); Trainer 1 | 64h | 7,560 |
| 44 | 1.1.9 | Document project progress | 137d | 2018-06-05 13:37 | 2018-12-15 13:37 | 123FF | 48.42d |  |  | Chris Johnson (Project Manager) [10%] | 109.6h | 8,220 |
| 45 | 1.2 | **System Requirements** | 13.33d | 2018-05-29 08:00 | 2018-06-15 10:38 |  |  |  |  |  | 311.92h | 23,394 |
| 46 | 1.2.1 | Gather Business Requirements | 4d | 2018-05-29 08:00 | 2018-06-01 17:00 |  | 15.5d | 0d |  | Ryan Neff (Functional Lead); Stacy Lyle (Functional Analyst) | 64h | 4,800 |
| 47 | 1.2.2 | Design Business Process Flows | 2d | 2018-06-04 08:00 | 2018-06-05 17:00 | 46 | 15.5d | 0d |  | Ryan Neff (Functional Lead); Stacy Lyle (Functional Analyst) | 32h | 2,400 |
| 48 | 1.2.3 | Document Business Process Flows | 0.5d | 2018-06-06 08:00 | 2018-06-06 12:00 | 47 | 197.5d |  |  | Ryan Neff (Functional Lead); Stacy Lyle (Functional Analyst) | 8h | 600 |
| 49 | 1.2.4 | Finalize Technical Requirements | 6d | 2018-05-29 08:00 | 2018-06-05 17:00 |  | 19.09d | 5d |  | Rick Burke (Infrastructure Lead) | 48h | 3,600 |
| 50 | 1.2.5 | Create Operational Requirements | 5d | 2018-06-06 08:00 | 2018-06-12 17:00 | 46, 47 | 15.5d | 0d |  | Ryan Neff (Functional Lead); Stacy Lyle (Functional Analyst); Rick Burke (Infrastructure Lead) | 120h | 9,000 |
| 51 | 1.2.6 | Identify Technical Infrastructure Needs | 2d | 2018-06-13 08:00 | 2018-06-14 17:00 | 49, 50 | 26.67d | 0d |  | Rick Burke (Infrastructure Lead) | 16h | 1,200 |
| 52 | 1.2.7 | Document Requirements | 0.33d | 2018-06-15 08:00 | 2018-06-15 10:38 | 46, 49, 50, 51 | 190.67d |  |  | Rick Burke (Infrastructure Lead); Stacy Lyle (Functional Analyst); Ryan Neff (Functional Lead) | 7.92h | 594 |
| 53 | 1.2.8 | Acceptance Criteria Buffer | 2d | 2018-06-15 08:00 | 2018-06-18 17:00 | 51 | 189d |  |  | Stacy Lyle (Functional Analyst) | 16h | 1,200 |
| 54 | 1.3 | **Software Requirements** | 19.5d | 2018-06-15 08:00 | 2018-07-13 12:00 |  |  |  |  |  | 352h | 26,400 |
| 55 | 1.3.1 | **Create Functional Requirements** | 19.5d | 2018-06-15 08:00 | 2018-07-13 12:00 | 46, 47, 50 |  |  |  |  | 216h | 16,200 |
| 56 | 1.3.1.1 | Capture Customer Profile | 4d | 2018-06-15 08:00 | 2018-06-20 17:00 |  | 5.72d | 2d |  | Ryan Neff (Functional Lead) | 32h | 2,400 |
| 57 | 1.3.1.2 | View and Search Product Catalog | 6d | 2018-06-15 08:00 | 2018-06-22 17:00 |  | 0.5d | 0d |  | Ryan Neff (Functional Lead) | 48h | 3,600 |
| 58 | 1.3.1.3 | Updating and Calculating Shopping Cart | 3d | 2018-06-25 08:00 | 2018-06-27 17:00 | 57 | 0.5d | 0d |  | Ryan Neff (Functional Lead) | 24h | 1,800 |
| 59 | 1.3.1.4 | Taking Payments | 6d | 2018-06-15 08:00 | 2018-06-22 17:00 |  | 3.72d | 3d |  | Stacy Lyle (Functional Analyst) | 48h | 3,600 |
| 60 | 1.3.1.5 | Submit Order | 8d | 2018-06-28 08:00 | 2018-07-10 17:00 | 56, 57, 58, 59 | 0.5d | 0d |  | Ryan Neff (Functional Lead) [50%] | 32h | 2,400 |
| 61 | 1.3.1.6 | Check Order History & Order Status | 3d | 2018-07-11 08:00 | 2018-07-13 17:00 | 60 | 0.5d | 0d |  | Ryan Neff (Functional Lead) | 24h | 1,800 |
| 62 | 1.3.1.7 | Document Functional requirements | 0.5d | 2018-07-16 08:00 | 2018-07-16 12:00 | 56, 57, 58, 59, 60, 61 | 0.5d |  |  | Ryan Neff (Functional Lead); Stacy Lyle (Functional Analyst) | 8h | 600 |
| 63 | 1.3.2 | Create Data Requirements | 3d | 2018-06-25 08:00 | 2018-06-27 17:00 | 56, 57 | 20d | 7d |  | Stacy Lyle (Functional Analyst) | 24h | 1,800 |
| 64 | 1.3.3 | Create ERP Interface Requirements | 7d | 2018-06-28 08:00 | 2018-07-09 17:00 | 60SS | 12d | 0d |  | Stacy Lyle (Functional Analyst) | 56h | 4,200 |
| 65 | 1.3.4 | Create User Interface Requirements | 4d | 2018-06-25 08:00 | 2018-06-28 17:00 | 55SS | 18d | 0d |  | Stacy Lyle (Functional Analyst) | 32h | 2,400 |
| 66 | 1.3.5 | Document Data, ERP Interface and User Interface Requiremnts | 1d | 2018-07-10 08:00 | 2018-07-10 17:00 | 63, 64, 65 | 12d |  |  | Stacy Lyle (Functional Analyst) | 8h | 600 |
| 67 | 1.3.6 | Acceptance Criteria Buffer | 2d | 2018-06-29 08:00 | 2018-07-02 17:00 | 65 | 18d |  |  | Stacy Lyle (Functional Analyst) | 16h | 1,200 |

| ID | WBS | Task | Duration | Start | Finish | Predecessors | Total slack | Free slack | Resources | Work | Cost |
| --- | --- | --- | --- | --- | --- | --- | --- | --- | --- | --- | --- |
| 68 | 1.4 | **Detailed Design** | 29d | 2018-07-13 13:00 | 2018-08-23 12:00 | 54 | 1.5d | 0d |  | 816h | 78,624 |
| 69 | 1.4.1 | Design Capture Customer Profile Pages & Components | 9d | 2018-07-13 13:00 | 2018-07-26 12:00 |  | 13.5d | 0d | Marc Sanders (Development Lead); Ryan Neff (Functional Lead) [50%] | 108h | 8,100 |
| 70 | 1.4.2 | Design View and Search Product Catalog Pages & Components | 9d | 2018-07-13 13:00 | 2018-07-26 12:00 |  | 10.5d | 0d | Developer 1 (TBD); Ryan Neff (Functional Lead) [50%] | 108h | 14,580 |
| 71 | 1.4.3 | Design Updating and Calculating Shopping Cart | 3d | 2018-07-26 13:00 | 2018-07-31 12:00 | 70 | 10.5d | 0d | Developer 1 (TBD); Ryan Neff (Functional Lead) | 48h | 5,760 |
| 72 | 1.4.4 | Design Taking Payments Pages & Components | 6d | 2018-07-13 13:00 | 2018-07-31 12:00 |  | 10.5d | 0d | Marc Sanders (Development Lead); Stacy Lyle (Functional Analyst) | 48h | 3,600 |
| 73 | 1.4.5 | Design Submit Order Pages & Components | 8d | 2018-07-31 13:00 | 2018-08-10 12:00 | 69, 70, 71, 72 | 17.3d | 0d | Marc Sanders (Development Lead); Ryan Neff (Functional Lead) | 128h | 9,600 |
| 74 | 1.4.6 | Design check Order History & Order Status Pages & Components | 2d | 2018-08-10 13:00 | 2018-08-14 12:00 | 73 | 17.3d | 0d | Marc Sanders (Development Lead); Ryan Neff (Functional Lead) | 32h | 2,400 |
| 75 | 1.4.7 | Design Logical & Physical Data Model | 12d | 2018-07-13 13:00 | 2018-07-31 12:00 |  | 16.17d | 0d | Sanjay Vohra (DBA); Stacy Lyle (Functional Analyst) | 144h | 10,800 |
| 76 | 1.4.8 | Design ERP Interface | 15d | 2018-07-31 13:00 | 2018-08-21 12:00 | 69, 70, 71, 72 | 10.5d | 0d | Developer 1 (TBD) [66.7%]; Stacy Lyle (Functional Analyst) [66.7%] | 160h | 19,200 |
| 77 | 1.4.9 | Document the design of all modules | 0.2d | 2018-08-21 13:00 | 2018-08-21 14:36 | 69, 70, 71, 72, 73, 74, 75, 76 | 12.3d |  | Ryan Neff (Functional Lead); Stacy Lyle (Functional Analyst); Developer 1 (TBD); Marc Sanders (Development Lead); Sanjay Vohra (DBA) | 8h | 744 |
| 78 | 1.4.10 | Acceptance Criteria Buffer | 2d | 2018-08-21 13:00 | 2018-08-23 12:00 | 76 | 10.5d |  | Developer 1 (TBD); Ryan Neff (Functional Lead) | 32h | 3,840 |
| 79 | 1.5 | **Test Planning** | 55.67d | 2018-07-13 13:00 | 2018-10-02 09:20 |  | 23.5d |  |  | 464h | 34,800 |
| 80 | 1.5.1 | Gather Testing Requirements | 7d | 2018-07-13 13:00 | 2018-07-24 12:00 | 55 | 32.5d | 22d | Kara Siposki (Test Lead); Todd Eliason (Tester) | 112h | 8,400 |
| 81 | 1.5.2 | Create System Test Plan & Test Cases | 10d | 2018-08-23 13:00 | 2018-09-07 12:00 | 80, 68 | 10.5d | 0d | Kara Siposki (Test Lead); Todd Eliason (Tester) | 160h | 12,000 |
| 82 | 1.5.3 | Write System Test Scripts | 14.67d | 2018-09-07 13:00 | 2018-09-28 09:20 | 81 | 10.5d | 0d | Kara Siposki (Test Lead); Todd Eliason (Tester) | 176h | 13,200 |
| 83 | 1.5.4 | Acceptance Criteria Buffer | 2d | 2018-09-28 09:20 | 2018-10-02 09:20 | 82 | 111.83d |  | Kara Siposki (Test Lead) | 16h | 1,200 |
| 84 | 1.6 | **Technical Infrastructure** | 108.5d | 2018-06-15 08:00 | 2018-11-16 12:00 |  | 13.67d |  |  | 1164.8h | 112,960 |
| 85 | 1.6.1 | Procure Infrastructure | 2d | 2018-06-15 08:00 | 2018-06-18 17:00 | 51 | 26.67d | 0d | Rick Burke (Infrastructure Lead) | 16h | 1,200 |
| 86 | 1.6.2 | Create Development Environment | 20d | 2018-06-19 08:00 | 2018-07-17 17:00 | 85 | 22.67d | 0d | Rick Burke (Infrastructure Lead) | 160h | 12,000 |
| 87 | 1.6.3 | Create Testing Environment | 38d | 2018-07-18 08:00 | 2018-09-10 17:00 | 86 | 80.5d | 0d | Rick Burke (Infrastructure Lead) [90%] | 273.6h | 20,520 |
| 88 | 1.6.4 | Support Development Environment | 38d | 2018-07-18 08:00 | 2018-09-10 17:00 | 86 | 126.5d | 46d | Rick Burke (Infrastructure Lead) [10%] | 30.4h | 2,280 |
| 89 | 1.6.5 | Support Testing Environment & Deployment | 46d | 2018-09-11 08:00 | 2018-11-13 17:00 | 87 | 71.5d | 0d | Rick Burke (Infrastructure Lead) | 368h | 27,600 |
| 90 | 1.6.6 | Support Database | 46d | 2018-09-13 13:00 | 2018-11-16 12:00 | 106 | 69.5d |  | Sanjay Vohra (DBA) [10%] | 36.8h | 2,760 |
| 91 | 1.6.7 | Security and Maintenance: Add web application and real-time backups | 7d | 2018-09-11 08:00 | 2018-09-19 17:00 | 87 | 93d | 0d | ERP Expert 1 | 56h | 9,800 |
| 92 | 1.6.8 | Security and Maintenance: Data Loss Prevention Infrastructure | 6d | 2018-09-20 08:00 | 2018-09-27 17:00 | 91 | 93d | 0d | EPR Expert 2 | 48h | 8,400 |
| 93 | 1.6.9 | Security and Maintenance: Setup Authentication | 6d | 2018-09-28 08:00 | 2018-10-05 17:00 | 92 | 93d | 0d | ERP Expert 1 | 48h | 8,400 |
| 94 | 1.6.10 | Security and Maintenance: Threat Intelligence | 6d | 2018-10-08 08:00 | 2018-10-15 17:00 | 93 | 93d | 0d | EPR Expert 2 | 48h | 8,400 |
| 95 | 1.6.11 | Security and Maintenance: Identity and Access Management | 7d | 2018-10-16 08:00 | 2018-10-24 17:00 | 94 | 93d | 0d | ERP Expert 1 | 56h | 9,800 |
| 96 | 1.6.12 | Document Technical infrastructure details | 0.5d | 2018-11-14 08:00 | 2018-11-14 12:00 | 86, 87, 88, 89, 95 | 71.5d |  | Rick Burke (Infrastructure Lead); Sanjay Vohra (DBA) | 8h | 600 |
| 97 | 1.6.13 | Acceptance Criteria Buffer | 2d | 2018-10-25 08:00 | 2018-10-26 17:00 | 95 | 93d |  | Rick Burke (Infrastructure Lead) | 16h | 1,200 |

| ID | WBS | Task | Duration | Start | Finish | Predecessors | Total slack | Free slack | Constraint | Resources | Work | Cost |
| --- | --- | --- | --- | --- | --- | --- | --- | --- | --- | --- | --- | --- |
| 98 | 1.7 | **Development & Unit Test** | 54.96d | 2018-07-26 13:00 | 2018-10-12 11:39 | 86 | 7.17d |  |  |  | 1420.24h | 189,510.8 |
| 99 | 1.7.1 | Train developers | 3d | 2018-07-26 13:00 | 2018-07-31 12:00 | 69 | 16.17d | 0d |  | Trainer 1; Developer 1 (TBD); Developer 2 (TBD); Developer 3 (TBD) | 96h | 14,160 |
| 100 | 1.7.2 | Build Capture Customer Profile Pages & Components | 13d | 2018-07-31 13:00 | 2018-08-27 12:00 | 69, 99 | 16.17d | 0d |  | Developer 2 (TBD) | 104h | 18,200 |
| 101 | 1.7.3 | Build View and Search Product Catalog Pages & Components | 12d | 2018-07-31 13:00 | 2018-08-16 12:00 | 70, 99 | 16.17d | 0d |  | Developer 3 (TBD) | 96h | 16,800 |
| 102 | 1.7.4 | Build Updating and Calculating Shopping Cart | 7d | 2018-08-16 13:00 | 2018-08-27 12:00 | 71, 101, 99 | 16.17d | 0d |  | Developer 3 (TBD) | 56h | 9,800 |
| 103 | 1.7.5 | Build Taking Payments Pages & Components | 6d | 2018-07-31 13:00 | 2018-08-08 12:00 | 72, 99 | 29.17d | 13d |  | Developer 2 (TBD) | 48h | 8,400 |
| 104 | 1.7.6 | Build Submit Order Pages & Components | 12d | 2018-08-27 13:00 | 2018-09-13 12:00 | 73, 100, 101, 102, 103, 99 | 16.17d | 2d |  | Developer 2 (TBD); Developer 3 (TBD) | 192h | 33,600 |
| 105 | 1.7.7 | Build Check Order History & Order Status Pages & Components | 6d | 2018-08-14 13:00 | 2018-08-22 12:00 | 74, 99 | 31.17d | 17d |  | Marc Sanders (Development Lead) | 48h | 3,600 |
| 106 | 1.7.8 | Build Logical & Physical Data Model | 31d | 2018-07-31 13:00 | 2018-09-13 12:00 | 75, 99 | 16.17d | 0d |  | Sanjay Vohra (DBA) [50%] | 124h | 9,300 |
| 107 | 1.7.9 | Build ERP Interface | 18d | 2018-08-21 13:00 | 2018-09-17 12:00 | 76, 99 | 14.17d | 0d |  | Developer 1 (TBD) | 144h | 23,760 |
| 108 | 1.7.10 | Support Development & Assembly Test | 26.67d | 2018-08-23 13:00 | 2018-10-02 09:20 | 68, 99 | 103.54d | 0d |  | Ryan Neff (Functional Lead); Stacy Lyle (Functional Analyst) | 368h | 27,600 |
| 109 | 1.7.11 | Security and Maintenance Unit Testing | 8d | 2018-10-02 09:20 | 2018-10-12 09:20 | 108 | 103.54d | 0d |  | EPR Expert 2; ERP Expert 1 | 128h | 22,400 |
| 110 | 1.7.12 | Document development work and best practices | 0.29d | 2018-10-12 09:20 | 2018-10-12 11:39 | 100, 101, 102, 103, 104, 105, 106, 107, 109 | 103.54d |  |  | Developer 1 (TBD); Developer 2 (TBD); Developer 3 (TBD); Stacy Lyle (Functional Analyst); Sanjay Vohra (DBA); Marc Sanders (Development Lead); Ryan Neff (Functional Lead) | 16.24h | 1,890.8 |
| 111 | 1.8 | **Testing** | 55d | 2018-08-27 13:00 | 2018-11-13 11:58 |  | 1.5d | 0.5d |  |  | 2319.84h | 280,433.6 |
| 112 | 1.8.1 | **Perform Assembly Testing** | 19d | 2018-08-27 13:00 | 2018-09-24 12:00 | 80 | 5.17d | 3.67d |  |  | 256h | 30,800 |
| 113 | 1.8.1.1 | Perform Phase 1 Testing | 12d | 2018-08-27 13:00 | 2018-09-13 12:00 | 100, 101, 102 | 16.17d | 2d |  | Marc Sanders (Development Lead) | 96h | 7,200 |
| 114 | 1.8.1.2 | Perform Phase 2 Testing | 5d | 2018-09-17 13:00 | 2018-09-24 12:00 | 103, 104, 105, 113, 106, 107 | 14.17d |  |  | Marc Sanders (Development Lead); Developer 1 (TBD); Developer 2 (TBD); Developer 3 (TBD) | 160h | 23,600 |
| 115 | 1.8.2 | Perform System Testing | 16d | 2018-09-28 09:20 | 2018-10-22 09:20 | 112, 81, 82 | 10.5d | 0d |  | Developer 1 (TBD); Developer 2 (TBD); Developer 3 (TBD); Kara Siposki (Test Lead); Marc Sanders (Development Lead); Ryan Neff (Functional Lead); Stacy Lyle (Functional Analyst); Todd Eliason (Tester); EPR Expert 2; ERP Expert 1 | 1280h | 158,720 |
| 116 | 1.8.3 | Perform Validation Testing | 8d | 2018-10-22 09:20 | 2018-11-01 09:20 | 115 | 10.5d | 0d |  | Kara Siposki (Test Lead); Todd Eliason (Tester); Marc Sanders (Development Lead); Developer 1 (TBD); Developer 2 (TBD); Developer 3 (TBD); Ryan Neff (Functional Lead); Stacy Lyle (Functional Analyst); End User 1; End User 2 | 640h | 66,560 |
| 117 | 1.8.4 | Security and Maintenane Testing | 8d | 2018-11-01 09:20 | 2018-11-13 09:20 | 116 | 1.5d | 0d |  | EPR Expert 2; ERP Expert 1 | 128h | 22,400 |
| 118 | 1.8.5 | Document tests and test results | 0.33d | 2018-11-13 09:20 | 2018-11-13 11:58 | 112, 115, 117 | 1.5d |  |  | Developer 1 (TBD); Developer 2 (TBD); Developer 3 (TBD); Kara Siposki (Test Lead); Stacy Lyle (Functional Analyst); Todd Eliason (Tester) | 15.84h | 1,953.6 |
| 119 | 1.9 | **Deployment** | 23.58d? | 2018-11-14 08:00 | 2018-12-15 13:37 | 111 | 1d |  |  |  | 1440h | 152,341.05 |
| 120 | 1.9.1 | Implement System | 10d | 2018-11-14 08:00 | 2018-11-29 17:00 |  | 1d | 0d | start no earlier than 2018-11-14 08:00 | Kara Siposki (Test Lead); Todd Eliason (Tester); Marc Sanders (Development Lead); Developer 1 (TBD); Developer 2 (TBD); Developer 3 (TBD); Ryan Neff (Functional Lead); Stacy Lyle (Functional Analyst) | 640h | 71,200 |
| 121 | 1.9.2 | Deploy To Production | 1d | 2018-11-30 08:00 | 2018-11-30 17:00 | 120 | 1d | 0d |  | Kara Siposki (Test Lead); Todd Eliason (Tester); Marc Sanders (Development Lead); Developer 1 (TBD); Developer 2 (TBD); Developer 3 (TBD); Ryan Neff (Functional Lead); Stacy Lyle (Functional Analyst) | 64h | 7,120 |
| 122 | 1.9.3 | Acceptance Criteria Buffer | 1d? | 2018-12-03 08:00 | 2018-12-03 17:00 | 121 | 48.42d | 0d |  | Marc Sanders (Development Lead); Sanjay Vohra (DBA) | 16h | 1,200 |
| 123 | 1.9.4 | Project Wrap up | 11.58d | 2018-12-04 08:00 | 2018-12-15 13:37 | 122 | 48.42d | 0d |  | Developer 1 (TBD); Developer 2 (TBD); Developer 3 (TBD); Kara Siposki (Test Lead); Marc Sanders (Development Lead); Ryan Neff (Functional Lead); Stacy Lyle (Functional Analyst); Todd Eliason (Tester); Rick Burke (Infrastructure Lead) | 720h | 72,821.05 |

| ID | WBS | Task | Duration | Start | Finish | Predecessors | Total slack | Constraint | Resources | Work | Cost |
| --- | --- | --- | --- | --- | --- | --- | --- | --- | --- | --- | --- |
| 124 | 1.10 | **Post-installation Maintenance and Support** | 60d | 2018-12-04 08:00 | 2019-02-05 17:00 | 121 |  |  |  | 1920h | 288,000 |
| 125 | 1.10.1 | Maintenance Post-installation | 60d | 2018-12-04 08:00 | 2019-02-05 17:00 | 121 | 0d | start no earlier than 2018-12-04 08:00 | ERP Expert 1; Sanjay Vohra (DBA) | 960h | 120,000 |
| 126 | 1.10.2 | Support Post-Installation | 60d | 2018-12-04 08:00 | 2019-02-05 17:00 | 125FF | 0d |  | Developer 5; EPR Expert 2 | 960h | 168,000 |
